How a schedule from MS Project changed from version to version. A marks actual dates.

## Version 1 (saved 2018-10-13)

Note of the change: Merge

| ID | WBS | Task | Duration | Start | Finish | Total float |
| --- | --- | --- | --- | --- | --- | --- |
| 1 | 1 | **需求工程项目准备** | 59.75d | 2018-09-19 09:00 | 2018-11-08 18:00 |  |
| 2 |  | 确定分组成员 | 1h | 2018-09-19 09:00 | 2018-09-19 10:00 |  |
| 3 |  | 课题选定 | 2d | 2018-09-19 09:00 | 2018-09-20 18:00 |  |
| 4 |  | 第一次会议 | 1h | 2018-09-21 09:00 | 2018-09-21 10:00 |  |
| 5 |  | 统一开发工具 | 1d | 2018-09-19 09:00 | 2018-09-20 09:00 | 99.88d |
| 6 |  | 确定小组成员职责 | 1d | 2018-09-26 09:00 | 2018-09-27 09:00 |  |
| 7 | 1.6 | **需求工程项目计划** | 50.5d | 2018-09-26 09:00 | 2018-11-07 18:00 |  |
| 8 |  | 第2次会议 | 1h | 2018-09-27 09:00 | 2018-09-27 10:00 |  |
| 9 |  | 人力资源管理计划 | 3h | 2018-09-28 09:00 | 2018-09-28 12:00 |  |
| 10 |  | 成本管理计划 | 3h | 2018-09-28 09:00 | 2018-09-28 12:00 |  |
| 11 |  | 沟通管理计划 | 3h | 2018-09-28 09:00 | 2018-09-28 12:00 |  |
| 12 |  | 风险管理计划 | 3h | 2018-09-28 09:00 | 2018-09-28 12:00 |  |
| 13 |  | 需求工程项目计划书 | 5h | 2018-09-27 09:00 | 2018-09-27 15:00 | 91d |
| 14 |  | UML概述PPT（翻转） | 7.75d | 2018-10-08 09:00 | 2018-10-14 18:00 |  |
| 15 |  | UML工具学习 | 7d | 2018-10-17 09:00 | 2018-10-22 16:00 |  |
| 16 |  | UML建模基础学习 | 5d | 2018-10-26 09:00 | 2018-10-29 16:00 |  |
| 17 |  | 第3次会议 | 1h | 2018-10-31 09:00 | 2018-10-31 10:00 |  |
| 18 | 2 | **需求开发阶段** | 44.38d | 2018-11-01 09:00 | 2018-12-08 18:00 |  |
| 19 | 2.1 | **需求获取** | 10.88d | 2018-11-05 09:00 | 2018-11-14 15:00 | 0d |
| 20 |  | 用户群分类 | 2h | 2018-11-08 09:00 | 2018-11-08 11:00 |  |
| 21 |  | 定义愿景和范围 | 3h | 2018-11-08 09:00 | 2018-11-08 12:00 |  |
| 22 |  | 初步制定功能点列表 | 3h | 2018-11-08 09:00 | 2018-11-08 12:00 |  |
| 23 |  | 选择产品代表 | 1h | 2018-11-08 09:00 | 2018-11-08 10:00 |  |
| 24 |  | 建立核心队伍 | 1h | 2018-11-08 09:00 | 2018-11-08 10:00 |  |
| 25 |  | 第4次会议 | 2h | 2018-11-05 09:00 | 2018-11-05 11:00 |  |
| 26 |  | 项目下达者的访谈 | 1h | 2018-11-14 09:00 | 2018-11-14 10:00 |  |
| 27 |  | 绘制关联图 | 2h | 2018-11-12 09:00 | 2018-11-12 11:00 |  |
| 28 |  | 画用例图 | 1d | 2018-11-09 09:00 | 2018-11-10 09:00 |  |
| 29 |  | 教师需求第一次访谈 | 1h | 2018-11-06 09:00 | 2018-11-06 10:00 |  |
| 30 |  | 学生需求第一次访谈 | 1h | 2018-11-06 09:00 | 2018-11-06 10:00 |  |
| 31 |  | 游客需求第一次访谈 | 1h | 2018-11-06 09:00 | 2018-11-06 10:00 |  |
| 32 |  | 第5次会议 | 1h | 2018-11-08 09:00 | 2018-11-08 10:00 |  |
| 33 |  | 更新用例图 | 4h | 2018-11-12 09:00 | 2018-11-12 14:00 |  |
| 34 |  | 制作界面原型 | 1d | 2018-11-09 09:00 | 2018-11-10 09:00 |  |
| 35 |  | 教师需求第二次访谈 | 1h | 2018-11-12 09:00 | 2018-11-12 10:00 |  |
| 36 |  | 学生需求第二次访谈 | 1h | 2018-11-12 09:00 | 2018-11-12 10:00 |  |
| 37 |  | 游客需求第二次访谈 | 1h | 2018-11-12 09:00 | 2018-11-12 10:00 |  |
| 38 |  | 第6次会议 | 2h | 2018-11-13 09:00 | 2018-11-13 11:00 |  |
| 39 |  | 更新界面原型 | 5h | 2018-11-14 09:00 | 2018-11-14 15:00 |  |
| 40 |  | <新任务> | 1d? | 2018-11-05 09:00 | 2018-11-06 09:00 |  |
| 41 |  | <新任务> | 1d? | 2018-11-05 09:00 | 2018-11-06 09:00 |  |
| 42 |  | <新任务> | 1d? | 2018-11-05 09:00 | 2018-11-06 09:00 |  |
| 43 | 2.2 | **需求分析** | 7.44d | 2018-11-15 09:00 | 2018-11-21 10:30 | 0d |
| 44 |  | 第7次会议 | 1h | 2018-11-15 09:00 | 2018-11-15 10:00 |  |
| 45 |  | 创建开发原型 | 3h | 2018-11-15 09:00 | 2018-11-15 12:00 |  |
| 46 |  | 分析获取需求的可行性 | 3h | 2018-11-16 09:00 | 2018-11-16 12:00 |  |
| 47 |  | 确定需求的优先级 | 2h | 2018-11-16 09:00 | 2018-11-16 11:00 |  |
| 48 |  | 需求建模 | 3h | 2018-11-16 09:00 | 2018-11-16 12:00 |  |
| 49 |  | 编写数据字典 | 10h | 2018-11-19 09:00 | 2018-11-20 11:00 |  |
| 50 |  | 第8次会议 | 1.5h | 2018-11-21 09:00 | 2018-11-21 10:30 |  |
| 51 | 2.3 | **需求规范规格** | 9.25d | 2018-11-21 09:00 | 2018-11-28 18:00 |  |
| 52 |  | 使用需求规格说明书的模版 | 1h | 2018-11-22 09:00 | 2018-11-22 10:00 |  |
| 53 |  | 确认需求来源 | 2h | 2018-11-22 09:00 | 2018-11-22 11:00 |  |
| 54 |  | 确定每个需求的唯一标识 | 4h | 2018-11-23 09:00 | 2018-11-23 14:00 |  |
| 55 |  | 记录非功能需求 | 2h | 2018-11-23 09:00 | 2018-11-23 11:00 |  |
| 56 |  | 编写需求规格说明书 | 2d | 2018-11-26 09:00 | 2018-11-28 09:00 |  |
| 57 |  | 第9次会议 | 3h | 2018-11-28 09:00 | 2018-11-28 12:00 |  |
| 58 | 2.4 | **需求规格审核** | 7.25d | 2018-11-28 09:00 | 2018-12-03 18:00 |  |
| 59 |  | 需求评审 | 8h | 2018-11-29 09:00 | 2018-11-30 09:00 |  |
| 60 |  | 确定合格标准 | 4h | 2018-11-29 09:00 | 2018-11-29 14:00 |  |
| 61 |  | 编写用户手册 | 6h | 2018-11-30 09:00 | 2018-11-30 16:00 |  |
| 62 |  | 进行需求测试 | 4h | 2018-12-03 09:00 | 2018-12-03 14:00 |  |
| 63 |  | 第10次会议 | 1h | 2018-12-03 09:00 | 2018-12-03 10:00 |  |
| 64 |  | <新任务> | 1d? | 2018-11-28 09:00 | 2018-11-29 09:00 |  |
| 65 |  | <新任务> | 1d | 2018-11-28 09:00 | 2018-11-29 09:00 |  |
| 66 | 3 | **需求管理阶段** | 10.25d | 2018-12-05 09:00 | 2018-12-13 18:00 |  |
| 67 |  | 建立需求变更控制过程 | 1d | 2018-12-05 09:00 | 2018-12-06 09:00 |  |
| 68 |  | 对需求变更影响分析 | 1d | 2018-12-05 09:00 | 2018-12-06 09:00 |  |
| 69 |  | 建立基线并控制需求集合版本 | 1d | 2018-12-05 09:00 | 2018-12-06 09:00 |  |
| 70 |  | 记录需求变更的历史 | 4h | 2018-12-06 09:00 | 2018-12-06 14:00 |  |

| ID | Task | Duration | Start | Finish |
| --- | --- | --- | --- | --- |
| 71 | 第11次会议 | 1h | 2018-12-07 09:00 | 2018-12-07 10:00 |
| 72 | 衡量需求的稳定性 | 1d | 2018-12-07 09:00 | 2018-12-08 09:00 |
| 73 | 重新编写测试用例 | 1d | 2018-12-07 09:00 | 2018-12-08 09:00 |
| 74 | 完善界面原型 | 2d | 2018-12-10 09:00 | 2018-12-12 09:00 |
| 75 | 完善用户手册 | 2d | 2018-12-10 09:00 | 2018-12-12 09:00 |
| 76 | 验证变更 | 2d | 2018-12-10 09:00 | 2018-12-12 09:00 |
| 77 | 第12次会议 | 1h | 2018-12-13 09:00 | 2018-12-13 10:00 |

## Version 2 (saved 2018-10-18)

Note of the change: Merge branch 'develop' of https://github.com/boboHh/AssistantTeaching into develop

Last finish stays 2018-12-13.

Added:

| ID | Task | Duration | Start | Finish | Resources |
| --- | --- | --- | --- | --- | --- |
| 16 | 需求计划的修改与更新 | 1h | 2018-10-12 09:00 | 2018-10-12 10:00 | 黄为波 |
| 17 | 可行性分析报告的修改 | 3h | 2018-10-13 09:00 | 2018-10-13 12:00 | 黄为波 |
| 19 | 第4次会议 | 1h | 2018-10-19 09:00 | 2018-10-19 10:00 |  |

Changed:

| ID | Task | Start | Finish | Duration | Other |
| --- | --- | --- | --- | --- | --- |
| 14 | UML概述PPT（翻转） | 2018-10-08 09:00 → 2018-10-13 09:00 (+5d) | 2018-10-14 18:00 → 2018-10-14 20:00 | 7.75d → 3d | resources 蔡峰; 陈子卿; 黄为波; 江亮儒; 苏雨豪 → 蔡峰; 陈子卿; 江亮儒; 苏雨豪 |
| 15 | 第3次会议 | 2018-10-31 09:00 → 2018-10-12 09:00 (-19d) | 2018-10-31 10:00 → 2018-10-12 10:00 (-19d) |  | baseline start 2018-10-31 09:00 → none; baseline finish 2018-10-31 10:00 → none |

## Version 3 (saved 2018-10-24)

Note of the change: 针对答辩修改

Last finish stays 2018-12-13.

Added:

| ID | Task | Duration | Start | Finish | Resources |
| --- | --- | --- | --- | --- | --- |
| 66 | **培训与翻转课堂** | 36.62d | 2018-09-28 09:00 | 2018-10-28 17:00 |  |
| 67 | 负责讲解project的使用 | 2h | 2018-09-28 09:00 | 2018-09-28 11:00 | 小组全体成员; 黄为波 |
| 68 | 负责讲解word文档规范排版 | 1h | 2018-09-29 09:00 | 2018-09-29 10:00 | 黄为波; 小组全体成员 |
| 69 | uml概述的学习以及PPT制作 | 1d | 2018-10-13 09:00 | 2018-10-13 17:00 | 小组全体成员 |
| 70 | uml工具的学习 | 1d | 2018-10-21 09:00 | 2018-10-21 17:00 | 小组全体成员 |
| 71 | uml工具翻转PPT制作 | 1d | 2018-10-21 09:00 | 2018-10-21 17:00 | 江亮儒 |
| 72 | uml建模基础学习 | 1d | 2018-10-28 09:00 | 2018-10-28 17:00 | 小组全体成员 |
| 73 | **会议** | 27.88d | 2018-09-26 09:00 | 2018-10-20 10:00 |  |
| 74 | 第1次会议（明确贯穿项目的职责） | 8h | 2018-09-26 09:00 | 2018-09-26 18:00 | 小组全体成员 |
| 75 | 第2次会议(任务的安排与约定) | 1h | 2018-09-28 09:00 | 2018-09-28 10:00 | 小组全体成员 |
| 76 | 第3次会议(任务的安排与约定) | 1h | 2018-10-12 09:00 | 2018-10-12 10:00 | 小组全体成员 |
| 77 | 第4次会议(任务的安排与约定) | 1h | 2018-10-19 09:00 | 2018-10-19 10:00 | 小组全体成员 |
| 78 | 第5次会议(阶段性检查与审核) | 1h | 2018-10-20 09:00 | 2018-10-20 10:00 | 小组全体成员 |

Removed: 4 第一次会议; 8 第2次会议; 14 UML概述PPT（翻转）; 15 第3次会议; 18 UML工具学习; 19 第4次会议; 20 UML建模基础学习; 28 第4次会议; 35 第5次会议; 41 第6次会议; 47 第7次会议; 60 第9次会议; 66 第10次会议; 74 第11次会议; 80 第12次会议

Changed:

| ID | Task | Start | Finish | Duration |
| --- | --- | --- | --- | --- |
| 15 | **需求获取** | 2018-11-05 09:00 → 2018-11-06 09:00 (+1d) |  | 10.88d → 9.88d? |
| 33 | <新任务> | 2018-11-05 09:00 → 2018-11-06 09:00 (+1d) | 2018-11-06 09:00 → 2018-11-07 09:00 (+1d) |  |
| 34 | <新任务> | 2018-11-05 09:00 → 2018-11-06 09:00 (+1d) | 2018-11-06 09:00 → 2018-11-07 09:00 (+1d) |  |
| 35 | <新任务> | 2018-11-05 09:00 → 2018-11-06 09:00 (+1d) | 2018-11-06 09:00 → 2018-11-07 09:00 (+1d) |  |

## Version 4 (saved 2018-10-28)

Note of the change: 修改需求工程项目计划甘特图

Last finish stays 2018-12-13.

Added:

| ID | Task | Duration | Start | Finish | Predecessors | Resources |
| --- | --- | --- | --- | --- | --- | --- |
| 7 | 采用需求工程项目计划模板 | 0.1h | 2018-09-28 09:00 | 2018-09-28 09:06 |  | 黄为波 |
| 12 | 需求工程项目计划甘特图与wbs | 2h | 2018-09-29 09:00 | 2018-09-29 11:00 |  | 黄为波 |
| 15 | 整合并检查需求工程项目计划 | 1h | 2018-09-30 09:00 | 2018-09-30 10:00 | 7, 8, 9, 10, 11 | 黄为波 |
| 16 | 需求工程项目计划PPT起草 | 2h | 2018-09-30 09:00 | 2018-09-30 11:00 | 7, 8, 9, 10, 11 | 苏雨豪 |
| 18 | 增加并细化了技术可行性分析的有关内容 | 1h | 2018-10-13 09:00 | 2018-10-13 10:00 | 14 | 黄为波 |
| 19 | 修改人力资源管理部分 | 1h | 2018-10-14 09:00 | 2018-10-14 10:00 | 15, 8 | 蔡峰 |
| 20 | 修改wbs项目收尾部分 | 0.5h | 2018-10-18 09:00 | 2018-10-18 09:30 | 12 | 黄为波 |
| 21 | 需求工程项目计划修改(更新培训日期，删除了不必要的内容) | 1.5h | 2018-10-20 09:00 | 2018-10-20 10:30 | 17 | 蔡峰; 陈子卿 |
| 22 | 修改需求工程项目计划目录 | 0.1h | 2018-10-21 09:00 | 2018-10-21 09:06 | 21 | 陈子卿 |
| 23 | 质量保证计划编写 | 2h | 2018-10-27 09:00 | 2018-10-27 11:00 | 21 | 江亮儒; 苏雨豪 |
| 24 | 在需求工程项目计划增加范围、时间、质量管理计划 | 2h | 2018-10-27 09:00 | 2018-10-27 11:00 | 22 | 黄为波 |
| 25 | 根据预评审对“人员配置管理计划”以及“干系人手册”进行修改 | 1h | 2018-10-27 09:00 | 2018-10-27 10:00 | 24 | 蔡峰 |
| 26 | 风险管理计划修改，新增采购计划 | 1h | 2018-10-27 09:00 | 2018-10-27 10:00 | 25 | 陈子卿 |
| 27 | 修改需求工程项目计划答辩PPT | 1h | 2018-10-28 09:00 | 2018-10-28 10:00 | 26 | 蔡峰; 陈子卿 |
| 28 | 需求工程项目计划评审 | 0d | 2018-10-31 09:00 | 2018-10-31 09:00 |  |  |
| 29 | <新任务> | 1d? | 2018-09-26 09:00 | 2018-09-27 09:00 |  |  |
| 86 | 1.7UML2.0新特性+目录 | 2h | 2018-10-14 09:00 | 2018-10-14 11:00 | 85 | 苏雨豪 |
| 87 | 完成1.1-1.4UML的结构制作 | 2h | 2018-10-14 09:00 | 2018-10-14 11:00 | 85 | 陈子卿 |
| 88 | UML图PPT的初步编写 | 2h | 2018-10-14 09:00 | 2018-10-14 11:00 | 85 | 江亮儒 |
| 89 | 完成UML视图及系统开发阶段部分 | 2h | 2018-10-14 09:00 | 2018-10-14 11:00 | 85 | 蔡峰 |
| 90 | uml概述PPT答辩 | 0d | 2018-10-17 09:00 | 2018-10-17 09:00 |  |  |
| 91 | uml概述PPT修改 | 0.5h | 2018-10-19 09:00 | 2018-10-19 09:30 | 86, 87, 88, 89 | 江亮儒 |
| 94 | uml工具翻转PPT答辩 | 0d | 2018-10-24 09:00 | 2018-10-24 09:00 |  |  |
| 96 | 用例图、类图PPT制作 | 2h | 2018-10-25 10:00 | 2018-10-25 12:00 | 95 | 黄为波 |
| 97 | 通信图PPT制作 | 1h | 2018-10-27 09:00 | 2018-10-27 10:00 | 95 | 陈子卿 |
| 98 | 部署图PPT制作 | 1h | 2018-10-28 09:00 | 2018-10-28 10:00 | 95 | 江亮儒 |
| 99 | 状态机图PPT制作 | 1h | 2018-10-28 09:00 | 2018-10-28 10:00 | 95 | 苏雨豪 |
| 100 | 顺序图PPT制作 | 1h | 2018-10-27 09:00 | 2018-10-27 10:00 | 95 | 蔡峰 |
| 101 | uml图PPT答辩 | 0d | 2018-10-31 09:00 | 2018-10-31 09:00 |  |  |
| 108 | 第6次会议(阶段性检查与审核) | 1h | 2018-10-28 09:00 | 2018-10-28 10:00 |  | 小组全体成员 |
| 110 | <新任务> | 1d? | 2018-09-21 09:00 | 2018-09-22 09:00 |  |  |

Removed: 13 可行性分析报告的修改

Changed:

| ID | Task | Start | Finish | Duration | Total float | Predecessors | Other |
| --- | --- | --- | --- | --- | --- | --- | --- |
| 1 | **需求工程项目准备** |  |  | 59.75d → 51.5d |  |  |  |
| 2 | 确定分组成员 |  |  |  |  |  | resources 蔡峰; 陈子卿; 黄为波; 江亮儒; 苏雨豪 → 小组全体成员 |
| 3 | 课题选定 | 2018-09-19 09:00 → 2018-09-19 10:00 | 2018-09-20 18:00 → 2018-09-21 10:00 (+1d) |  |  | none → 2 | resources none → 小组全体成员 |
| 4 | 统一开发工具 | 2018-09-19 09:00 → 2018-09-19 10:00 | 2018-09-20 09:00 → 2018-09-20 10:00 |  | 99.88d → 99.75d | none → 2 | resources 蔡峰; 陈子卿; 黄为波; 江亮儒; 苏雨豪 → 小组全体成员 |
| 5 | 确定小组成员职责 | 2018-09-26 09:00 → 2018-09-19 10:00 (-7d) | 2018-09-27 09:00 → 2018-09-20 10:00 (-7d) |  |  | none → 2 | resources 蔡峰; 陈子卿; 黄为波; 江亮儒; 苏雨豪 → 小组全体成员 |
| 6 | **需求工程项目计划** |  | 2018-11-07 18:00 → 2018-10-31 18:00 (-7d) | 50.5d → 34d |  |  |  |
| 8 | 人力资源管理计划 | 2018-09-28 09:00 → 2018-09-29 09:00 (+1d) | 2018-09-28 12:00 → 2018-09-29 12:00 (+1d) |  |  | none → 7 |  |
| 9 | 成本管理计划 | 2018-09-28 09:00 → 2018-09-29 09:00 (+1d) | 2018-09-28 12:00 → 2018-09-29 11:00 (+1d) | 3h → 2h |  | none → 7 |  |
| 10 | 沟通管理计划 | 2018-09-28 09:00 → 2018-09-29 09:00 (+1d) | 2018-09-28 12:00 → 2018-09-29 12:00 (+1d) |  |  | none → 7 |  |
| 11 | 风险管理计划 | 2018-09-28 09:00 → 2018-09-29 09:00 (+1d) | 2018-09-28 12:00 → 2018-09-29 12:00 (+1d) |  |  | none → 7 |  |
| 14 | 可行性分析报告起草 | 2018-09-27 09:00 → 2018-09-30 15:00 (+3d) | 2018-09-27 15:00 → 2018-09-30 18:00 (+3d) | 5h → 3h | 91d → 78.5d |  | was named 需求工程项目计划书; constraint none → finish no earlier than 2018-09-30 18:00; resources 蔡峰; 陈子卿; 黄为波; 江亮儒; 苏雨豪 → 江亮儒 |
| 17 | 需求计划的项目概述错误信息修改 | 2018-10-12 09:00 → 2018-10-13 09:00 (+1d) | 2018-10-12 10:00 → 2018-10-13 10:00 (+1d) |  |  | none → 15 | was named 需求计划的修改与更新 |
| 31 | **需求获取** | 2018-11-06 09:00 → 2018-11-08 08:00 (+2d) | 2018-11-14 15:00 → 2018-11-18 09:00 (+4d) | 9.88d? → 12d |  |  |  |
| 32 | 用户群分类 | 2018-11-08 09:00 → 2018-11-08 08:00 | 2018-11-08 11:00 → 2018-11-08 08:00 | 2h → 0h |  | none → 6 |  |
| 33 | 定义愿景和范围 | 2018-11-08 09:00 → 2018-11-08 08:00 | 2018-11-08 12:00 → 2018-11-08 08:00 | 3h → 0h |  | none → 6 |  |
| 34 | 初步制定功能点列表 | 2018-11-08 09:00 → 2018-11-08 08:00 | 2018-11-08 12:00 → 2018-11-08 08:00 | 3h → 0h |  | none → 6 |  |
| 35 | 选择产品代表 | 2018-11-08 09:00 → 2018-11-08 11:00 | 2018-11-08 10:00 → 2018-11-08 11:00 | 1h → 0h |  | none → 6, 34 |  |
| 36 | 建立核心队伍 | 2018-11-08 09:00 → 2018-11-08 11:00 | 2018-11-08 10:00 → 2018-11-08 11:00 | 1h → 0h |  | none → 32, 34 |  |
| 37 | 项目下达者的访谈 | 2018-11-14 09:00 → 2018-11-10 09:00 (-4d) | 2018-11-14 10:00 → 2018-11-10 09:00 (-4d) | 1h → 0h |  | none → 34, 44, 36 |  |
| 38 | 绘制关联图 | 2018-11-12 09:00 → 2018-11-10 10:00 (-2d) | 2018-11-12 11:00 → 2018-11-10 10:00 (-2d) | 2h → 0h |  | none → 37 |  |
| 39 | 画用例图 | 2018-11-09 09:00 → 2018-11-10 10:00 (+1d) | 2018-11-10 09:00 → 2018-11-10 10:00 | 1d → 0h |  | none → 37 |  |
| 40 | 教师需求第一次访谈 | 2018-11-06 09:00 → 2018-11-10 18:00 (+4d) | 2018-11-06 10:00 → 2018-11-10 18:00 (+4d) | 1h → 0h |  | none → 38, 39 |  |
| 41 | 学生需求第一次访谈 | 2018-11-06 09:00 → 2018-11-10 18:00 (+4d) | 2018-11-06 10:00 → 2018-11-10 18:00 (+4d) | 1h → 0h |  | none → 38, 39 |  |
| 42 | 游客需求第一次访谈 | 2018-11-06 09:00 → 2018-11-10 18:00 (+4d) | 2018-11-06 10:00 → 2018-11-10 18:00 (+4d) | 1h → 0h |  | none → 38, 39 |  |
| 43 | 更新用例图 | 2018-11-12 09:00 → 2018-11-13 08:00 (+1d) | 2018-11-12 14:00 → 2018-11-13 08:00 (+1d) | 4h → 0h |  | none → 38, 39, 40, 41, 42 |  |
| 44 | 制作界面原型 | 2018-11-09 09:00 → 2018-11-15 09:00 (+6d) | 2018-11-10 09:00 → 2018-11-15 09:00 (+5d) | 1d → 0h |  |  |  |
| 45 | 教师需求第二次访谈 | 2018-11-12 09:00 → 2018-11-16 09:00 (+4d) | 2018-11-12 10:00 → 2018-11-16 09:00 (+4d) | 1h → 0h |  | none → 40 |  |
| 46 | 学生需求第二次访谈 | 2018-11-12 09:00 → 2018-11-16 09:00 (+4d) | 2018-11-12 10:00 → 2018-11-16 09:00 (+4d) | 1h → 0h |  | none → 41 |  |
| 47 | 游客需求第二次访谈 | 2018-11-12 09:00 → 2018-11-16 09:00 (+4d) | 2018-11-12 10:00 → 2018-11-16 09:00 (+4d) | 1h → 0h |  | none → 42 |  |
| 48 | 更新界面原型 | 2018-11-14 09:00 → 2018-11-18 09:00 (+4d) | 2018-11-14 15:00 → 2018-11-18 09:00 (+4d) | 5h → 0h |  | none → 44 |  |
| 49 | <新任务> | 2018-11-06 09:00 → 2018-11-08 08:00 (+2d) | 2018-11-07 09:00 → 2018-11-08 17:00 (+1d) |  |  |  |  |
| 50 | <新任务> | 2018-11-06 09:00 → 2018-11-08 08:00 (+2d) | 2018-11-07 09:00 → 2018-11-08 17:00 (+1d) |  |  |  |  |
| 51 | <新任务> | 2018-11-06 09:00 → 2018-11-08 08:00 (+2d) | 2018-11-07 09:00 → 2018-11-08 17:00 (+1d) |  |  |  |  |
| 52 | **需求分析** |  | 2018-11-21 10:30 → 2018-11-21 09:00 | 7.44d → 7.25d |  |  |  |
| 53 | 创建开发原型 |  | 2018-11-15 12:00 → 2018-11-15 09:00 | 3h → 0h |  |  |  |
| 54 | 分析获取需求的可行性 |  | 2018-11-16 12:00 → 2018-11-16 09:00 | 3h → 0h |  |  |  |
| 55 | 确定需求的优先级 |  | 2018-11-16 11:00 → 2018-11-16 09:00 | 2h → 0h |  |  |  |
| 56 | 需求建模 |  | 2018-11-16 12:00 → 2018-11-16 09:00 | 3h → 0h |  |  |  |
| 57 | 编写数据字典 |  | 2018-11-20 11:00 → 2018-11-19 09:00 (-1d) | 10h → 0h |  |  |  |
| 58 | 第8次会议 |  | 2018-11-21 10:30 → 2018-11-21 09:00 | 1.5h → 0h |  |  |  |
| 60 | 使用需求规格说明书的模版 |  | 2018-11-22 10:00 → 2018-11-22 09:00 | 1h → 0h |  |  |  |
| 61 | 确认需求来源 |  | 2018-11-22 11:00 → 2018-11-22 09:00 | 2h → 0h |  |  |  |
| 62 | 确定每个需求的唯一标识 |  | 2018-11-23 14:00 → 2018-11-23 09:00 | 4h → 0h |  |  |  |
| 63 | 记录非功能需求 |  | 2018-11-23 11:00 → 2018-11-23 09:00 | 2h → 0h |  |  |  |
| 64 | 编写需求规格说明书 |  | 2018-11-28 09:00 → 2018-11-26 09:00 (-2d) | 2d → 0h |  |  |  |
| 66 | 需求评审 |  | 2018-11-30 09:00 → 2018-11-29 09:00 (-1d) | 8h → 0h |  |  |  |
| 67 | 确定合格标准 |  | 2018-11-29 14:00 → 2018-11-29 09:00 | 4h → 0h |  |  |  |
| 68 | 编写用户手册 |  | 2018-11-30 16:00 → 2018-11-30 09:00 | 6h → 0h |  |  |  |
| 69 | 进行需求测试 |  | 2018-12-03 14:00 → 2018-12-03 09:00 | 4h → 0h |  |  |  |
| 73 | 建立需求变更控制过程 |  | 2018-12-06 09:00 → 2018-12-05 09:00 (-1d) | 1d → 0d |  |  |  |
| 74 | 对需求变更影响分析 |  | 2018-12-06 09:00 → 2018-12-05 09:00 (-1d) | 1d → 0d |  |  |  |
| 75 | 建立基线并控制需求集合版本 |  | 2018-12-06 09:00 → 2018-12-05 09:00 (-1d) | 1d → 0d |  |  |  |
| 76 | 记录需求变更的历史 |  | 2018-12-06 14:00 → 2018-12-06 09:00 | 4h → 0h |  |  |  |
| 77 | 衡量需求的稳定性 |  | 2018-12-08 09:00 → 2018-12-07 09:00 (-1d) | 1d → 0d |  |  |  |
| 78 | 重新编写测试用例 |  | 2018-12-08 09:00 → 2018-12-07 09:00 (-1d) | 1d → 0d |  |  |  |
| 79 | 完善界面原型 |  | 2018-12-12 09:00 → 2018-12-10 09:00 (-2d) | 2d → 0d |  |  |  |
| 80 | 完善用户手册 |  | 2018-12-12 09:00 → 2018-12-10 09:00 (-2d) | 2d → 0d |  |  |  |
| 81 | 验证变更 |  | 2018-12-12 09:00 → 2018-12-10 09:00 (-2d) | 2d → 0d |  |  |  |
| 82 | **培训与翻转课堂** |  | 2018-10-28 17:00 → 2018-10-31 09:00 (+3d) | 36.62d → 31d |  |  |  |
| 85 | uml概述的学习以及PPT制作 |  | 2018-10-13 17:00 → 2018-10-13 10:00 | 1d → 1h |  |  |  |
| 92 | uml工具的学习 |  | 2018-10-21 17:00 → 2018-10-21 10:00 | 1d → 1h |  |  |  |
| 93 | uml工具翻转PPT制作 |  | 2018-10-21 17:00 → 2018-10-21 10:00 | 1d → 1h |  |  |  |
| 95 | uml建模基础学习 | 2018-10-28 09:00 → 2018-10-25 09:00 (-3d) | 2018-10-28 17:00 → 2018-10-25 10:00 (-3d) | 1d → 1h |  |  |  |
| 102 | **会议** | 2018-09-26 09:00 → 2018-09-21 09:00 (-5d) | 2018-10-20 10:00 → 2018-10-28 10:00 (+8d) | 27.88d → 35.75d |  |  |  |
| 103 | 第1次会议（明确贯穿项目的职责） | 2018-09-26 09:00 → 2018-09-21 09:00 (-5d) | 2018-09-26 18:00 → 2018-09-21 10:00 (-5d) | 8h → 1h |  |  |  |

## Version 5 (saved 2018-10-30)

Note of the change: 修改甘特图

Last finish stays 2018-12-13. Complete tasks 0 → 26.

Added:

| ID | Task | Duration | Start | Finish | Predecessors | Resources |
| --- | --- | --- | --- | --- | --- | --- |
| 21 | 项目章程的编写 | 1h | 2018-10-20 09:00 A | 2018-10-20 10:00 A |  | 苏雨豪 |
| 29 | 小组组内模拟评审，修改了相关文档错误内容 | 1h | 2018-10-30 09:00 A | 2018-10-30 10:00 A | 28 | 小组全体成员 |
| 62 | 需求SRS评审 | 0d | 2018-11-30 09:00 | 2018-11-30 09:00 |  |  |
| 98 | uml界面原型学习 | 1h | 2018-11-01 09:00 | 2018-11-01 10:00 |  | 小组全体成员 |
| 99 | uml界面原型翻转 | 0d | 2018-11-06 09:00 | 2018-11-06 09:00 | 98 |  |

Removed: 29 <新任务>; 49 <新任务>; 50 <新任务>; 51 <新任务>; 58 第8次会议; 70 <新任务>; 71 <新任务>

Changed:

| ID | Task | Start | Finish | Duration | Complete | Total float | Predecessors | Other |
| --- | --- | --- | --- | --- | --- | --- | --- | --- |
| 1 | **需求工程项目准备** | 2018-09-19 09:00 A |  |  | 0% → 99% |  |  |  |
| 2 | 确定分组成员 | 2018-09-19 09:00 A | 2018-09-19 10:00 A |  | 0% → 100% |  |  |  |
| 3 | 课题选定 | 2018-09-19 10:00 A | 2018-09-21 10:00 A |  | 0% → 100% |  |  |  |
| 4 | 统一开发工具 | 2018-09-19 10:00 A | 2018-09-20 10:00 A |  | 0% → 100% | 99.75d → none |  |  |
| 5 | 确定小组成员职责 | 2018-09-19 10:00 A | 2018-09-20 10:00 A |  | 0% → 100% |  |  |  |
| 6 | **需求工程项目计划** | 2018-09-26 09:00 A |  |  | 0% → 99% |  |  |  |
| 7 | 采用需求工程项目计划模板 | 2018-09-28 09:00 A | 2018-09-28 09:06 A |  | 0% → 100% |  |  |  |
| 8 | 人力资源管理计划 | 2018-09-29 09:00 A | 2018-09-29 12:00 A |  | 0% → 100% |  |  |  |
| 9 | 成本管理计划 | 2018-09-29 09:00 A | 2018-09-29 11:00 A |  | 0% → 100% |  |  |  |
| 10 | 沟通管理计划 | 2018-09-29 09:00 A | 2018-09-29 12:00 A |  | 0% → 100% |  |  |  |
| 11 | 风险管理计划 | 2018-09-29 09:00 A | 2018-09-29 12:00 A |  | 0% → 100% |  |  |  |
| 12 | 需求工程项目计划甘特图与wbs | 2018-09-29 09:00 A | 2018-09-29 11:00 A |  | 0% → 100% |  |  |  |
| 14 | 可行性分析报告起草 | 2018-09-30 15:00 A | 2018-09-30 18:00 A |  | 0% → 100% | 78.5d → none |  |  |
| 15 | 整合并检查需求工程项目计划 | 2018-09-30 09:00 A | 2018-09-30 10:00 A |  | 0% → 100% |  |  |  |
| 16 | 需求工程项目计划PPT起草 | 2018-09-30 09:00 A | 2018-09-30 11:00 A |  | 0% → 100% |  |  |  |
| 17 | 需求计划的项目概述错误信息修改 | 2018-10-13 09:00 A | 2018-10-13 10:00 A |  | 0% → 100% |  |  |  |
| 18 | 增加并细化了技术可行性分析的有关内容 | 2018-10-13 09:00 A | 2018-10-13 10:00 A |  | 0% → 100% |  |  |  |
| 19 | 修改人力资源管理部分 | 2018-10-14 09:00 A | 2018-10-14 10:00 A |  | 0% → 100% |  |  |  |
| 20 | 修改wbs项目收尾部分 | 2018-10-18 09:00 A | 2018-10-18 09:30 A |  | 0% → 100% |  |  |  |
| 22 | 需求工程项目计划修改(更新培训日期，删除了不必要的内容) | 2018-10-20 09:00 A | 2018-10-20 10:30 A |  | 0% → 100% |  |  |  |
| 23 | 修改需求工程项目计划目录 | 2018-10-21 09:00 A | 2018-10-21 09:06 A |  | 0% → 100% |  |  |  |
| 24 | 质量保证计划编写 | 2018-10-27 09:00 A | 2018-10-27 11:00 A |  | 0% → 100% |  |  |  |
| 25 | 在需求工程项目计划增加范围、时间、质量管理计划 | 2018-10-27 09:00 A | 2018-10-27 11:00 A |  | 0% → 100% |  |  |  |
| 26 | 根据预评审对“人员配置管理计划”以及“干系人手册”进行修改 | 2018-10-27 09:00 A | 2018-10-27 10:00 A |  | 0% → 100% |  |  |  |
| 27 | 风险管理计划修改，新增采购计划 | 2018-10-27 09:00 A | 2018-10-27 10:00 A |  | 0% → 100% |  |  |  |
| 28 | 修改需求工程项目计划答辩PPT | 2018-10-28 09:00 A | 2018-10-28 10:00 A |  | 0% → 100% |  |  |  |
| 30 | 需求工程项目计划评审 |  |  |  |  |  | none → 29 |  |
| 32 | **需求获取** |  | 2018-11-18 09:00 → 2018-11-18 10:00 | 12d → 12.12d |  |  |  |  |
| 33 | 用户群分类 |  | 2018-11-08 08:00 → 2018-11-08 09:00 | 0h → 1h |  |  |  |  |
| 34 | 定义愿景和范围 |  | 2018-11-08 08:00 → 2018-11-08 09:00 | 0h → 1h |  |  |  |  |
| 35 | 初步制定功能点列表 |  | 2018-11-08 08:00 → 2018-11-08 09:00 | 0h → 1h |  |  |  |  |
| 36 | 选择产品代表 |  | 2018-11-08 11:00 → 2018-11-08 12:00 | 0h → 1h |  |  |  | resources 蔡峰; 陈子卿; 黄为波; 江亮儒; 苏雨豪 → 小组全体成员 |
| 37 | 建立核心队伍 |  | 2018-11-08 11:00 → 2018-11-08 12:00 | 0h → 1h |  |  |  | resources 蔡峰; 陈子卿; 黄为波; 江亮儒; 苏雨豪 → 小组全体成员 |
| 38 | 项目下达者的访谈 |  | 2018-11-10 09:00 → 2018-11-10 10:00 | 0h → 1h |  |  |  | resources 蔡峰; 陈子卿; 黄为波; 江亮儒; 苏雨豪 → 小组全体成员 |
| 39 | 绘制关联图 |  | 2018-11-10 10:00 → 2018-11-10 11:00 | 0h → 1h |  |  |  |  |
| 40 | 画用例图 |  | 2018-11-10 10:00 → 2018-11-10 11:00 | 0h → 1h |  |  |  |  |
| 41 | 教师需求第一次访谈 |  | 2018-11-10 18:00 → 2018-11-10 19:00 | 0h → 1h |  |  |  |  |
| 42 | 学生需求第一次访谈 |  | 2018-11-10 18:00 → 2018-11-10 19:00 | 0h → 1h |  |  |  |  |
| 43 | 游客需求第一次访谈 |  | 2018-11-10 18:00 → 2018-11-10 19:00 | 0h → 1h |  |  |  | resources 蔡峰 → 黄为波 |
| 44 | 更新用例图 |  | 2018-11-13 08:00 → 2018-11-13 09:00 | 0h → 1h |  |  |  |  |
| 45 | 制作界面原型 |  | 2018-11-15 09:00 → 2018-11-15 10:00 | 0h → 1h |  |  |  |  |
| 46 | 教师需求第二次访谈 |  | 2018-11-16 09:00 → 2018-11-16 10:00 | 0h → 1h |  |  |  |  |
| 47 | 学生需求第二次访谈 |  | 2018-11-16 09:00 → 2018-11-16 10:00 | 0h → 1h |  |  |  |  |
| 48 | 游客需求第二次访谈 |  | 2018-11-16 09:00 → 2018-11-16 10:00 | 0h → 1h |  |  |  | resources 苏雨豪 → 蔡峰 |
| 49 | 更新界面原型 |  | 2018-11-18 09:00 → 2018-11-18 10:00 | 0h → 1h |  |  |  | resources 陈子卿; 黄为波 → 小组全体成员 |
| 50 | **需求分析** |  | 2018-11-21 09:00 → 2018-11-19 10:00 (-2d) | 7.25d → 5.38d |  |  |  |  |
| 51 | 创建开发原型 |  | 2018-11-15 09:00 → 2018-11-15 10:00 | 0h → 1h |  |  |  | resources 江亮儒 → 江亮儒; 苏雨豪 |
| 52 | 分析获取需求的可行性 |  | 2018-11-16 09:00 → 2018-11-16 10:00 | 0h → 1h |  |  |  |  |
| 53 | 确定需求的优先级 |  | 2018-11-16 09:00 → 2018-11-16 10:00 | 0h → 1h |  |  |  |  |
| 54 | 需求建模 |  | 2018-11-16 09:00 → 2018-11-16 10:00 | 0h → 1h |  |  |  |  |
| 55 | 编写数据字典 |  | 2018-11-19 09:00 → 2018-11-19 10:00 | 0h → 1h |  |  |  | resources 蔡峰; 陈子卿; 黄为波; 江亮儒; 苏雨豪 → 小组全体成员 |
| 56 | **需求规范规格** |  | 2018-11-28 18:00 → 2018-11-30 18:00 (+2d) | 9.25d → 11.25d |  |  |  |  |
| 57 | 使用需求规格说明书的模版 |  | 2018-11-22 09:00 → 2018-11-22 10:00 | 0h → 1h |  |  |  |  |
| 58 | 确认需求来源 |  | 2018-11-22 09:00 → 2018-11-22 10:00 | 0h → 1h |  |  |  |  |
| 59 | 确定每个需求的唯一标识 |  | 2018-11-23 09:00 → 2018-11-23 10:00 | 0h → 1h |  |  |  |  |
| 60 | 记录非功能需求 |  | 2018-11-23 09:00 → 2018-11-23 10:00 | 0h → 1h |  |  |  | resources 江亮儒; 苏雨豪 → 苏雨豪; 陈子卿 |
| 61 | 编写需求规格说明书 |  | 2018-11-26 09:00 → 2018-11-26 10:00 | 0h → 1h |  |  |  | resources 蔡峰; 陈子卿; 黄为波; 江亮儒; 苏雨豪 → 小组全体成员 |
| 64 | 需求评审 |  | 2018-11-29 09:00 → 2018-11-29 10:00 | 0h → 1h |  |  |  | resources 陈子卿; 黄为波; 江亮儒 → 陈子卿; 江亮儒 |
| 65 | 确定合格标准 |  | 2018-11-29 09:00 → 2018-11-29 10:00 | 0h → 1h |  |  |  |  |
| 66 | 编写用户手册 |  | 2018-11-30 09:00 → 2018-11-30 10:00 | 0h → 1h |  |  |  | resources 蔡峰; 陈子卿 → 陈子卿 |
| 67 | 进行需求测试 |  | 2018-12-03 09:00 → 2018-12-03 10:00 | 0h → 1h |  |  |  |  |
| 69 | 建立需求变更控制过程 |  | 2018-12-05 09:00 → 2018-12-05 10:00 | 0d → 1h |  |  |  |  |
| 70 | 对需求变更影响分析 |  | 2018-12-05 09:00 → 2018-12-05 10:00 | 0d → 1h |  |  |  |  |
| 71 | 建立基线并控制需求集合版本 |  | 2018-12-05 09:00 → 2018-12-05 10:00 | 0d → 1h |  |  |  |  |
| 72 | 记录需求变更的历史 |  | 2018-12-06 09:00 → 2018-12-06 10:00 | 0h → 1h |  |  |  |  |
| 73 | 衡量需求的稳定性 |  | 2018-12-07 09:00 → 2018-12-07 10:00 | 0d → 1h |  |  |  |  |
| 74 | 重新编写测试用例 |  | 2018-12-07 09:00 → 2018-12-07 10:00 | 0d → 1h |  |  |  |  |
| 75 | 完善界面原型 |  | 2018-12-10 09:00 → 2018-12-10 10:00 | 0d → 1h |  |  |  |  |
| 76 | 完善用户手册 |  | 2018-12-10 09:00 → 2018-12-10 10:00 | 0d → 1h |  |  |  |  |
| 78 | **培训与翻转课堂** |  | 2018-10-31 09:00 → 2018-11-06 09:00 (+6d) | 31d → 38.25d |  |  |  |  |

| ID | Task | Predecessors |
| --- | --- | --- |
| 97 | uml图PPT答辩 | none → 92, 93, 94, 95, 96 |

## Version 6 (saved 2018-11-04)

Note of the change: 修改·甘特图增加绩效考评

Last finish 2018-12-13 → 2018-12-14 (+1d).

Added:

| ID | Task | Duration | Start | Finish | Predecessors | Resources |
| --- | --- | --- | --- | --- | --- | --- |
| 31 | 修改风险管理计划以及预算 | 0.5h | 2018-11-01 09:00 | 2018-11-01 09:30 | 30 | 陈子卿 |
| 32 | 修改项目章程的批准 | 0.5h | 2018-11-04 09:00 | 2018-11-04 09:30 | 30 | 苏雨豪 |
| 33 | 修改干系人手册与沟通管理计划 | 0.5h | 2018-11-01 09:00 | 2018-11-01 09:30 | 30 | 蔡峰 |
| 34 | 修改可行性分析报告增加SWOT分析 | 0.5h | 2018-11-04 09:00 | 2018-11-04 09:30 | 30 | 江亮儒 |
| 111 | 第7次会议(阶段性检查与审核) | 1h | 2018-11-04 09:00 | 2018-11-04 10:00 |  | 小组全体成员 |
| 113 | <新任务> | 1d? | 2018-09-21 09:00 | 2018-09-22 09:00 |  |  |

Removed: 64 需求评审

Changed:

| ID | Task | Start | Finish | Duration | Complete | Predecessors |
| --- | --- | --- | --- | --- | --- | --- |
| 1 | **需求工程项目准备** |  |  |  | 99% → 88% |  |
| 6 | **需求工程项目计划** |  |  |  | 99% → 80% |  |
| 37 | **需求获取** | 2018-11-08 08:00 → 2018-11-08 09:00 |  | 12.12d → 12d |  |  |
| 38 | 用户群分类 | 2018-11-08 08:00 → 2018-11-08 09:00 | 2018-11-08 09:00 → 2018-11-08 10:00 |  |  |  |
| 39 | 定义愿景和范围 | 2018-11-08 08:00 → 2018-11-08 09:00 | 2018-11-08 09:00 → 2018-11-08 10:00 |  |  |  |
| 40 | 初步制定功能点列表 | 2018-11-08 08:00 → 2018-11-08 09:00 | 2018-11-08 09:00 → 2018-11-08 10:00 |  |  |  |
| 41 | 选择产品代表 | 2018-11-08 11:00 → 2018-11-08 09:00 | 2018-11-08 12:00 → 2018-11-08 10:00 |  |  |  |
| 42 | 建立核心队伍 | 2018-11-08 11:00 → 2018-11-08 09:00 | 2018-11-08 12:00 → 2018-11-08 10:00 |  |  |  |
| 43 | 项目下达者的访谈 | 2018-11-10 09:00 → 2018-11-10 18:00 | 2018-11-10 10:00 → 2018-11-10 19:00 |  |  |  |
| 44 | 绘制关联图 | 2018-11-10 10:00 → 2018-11-10 18:00 | 2018-11-10 11:00 → 2018-11-10 19:00 |  |  |  |
| 45 | 画用例图 | 2018-11-10 10:00 → 2018-11-10 18:00 | 2018-11-10 11:00 → 2018-11-10 19:00 |  |  |  |
| 49 | 更新用例图 | 2018-11-13 08:00 → 2018-11-13 09:00 | 2018-11-13 09:00 → 2018-11-13 10:00 |  |  |  |
| 56 | 创建开发原型 |  |  |  |  | none → 38, 39, 40, 41, 42 |
| 57 | 分析获取需求的可行性 |  |  |  |  | none → 43, 44, 45, 49, 50, 54 |
| 58 | 确定需求的优先级 |  |  |  |  | none → 57 |
| 59 | 需求建模 |  |  |  |  | none → 57, 58 |
| 60 | 编写数据字典 |  |  |  |  | none → 56, 57, 58, 59 |
| 63 | 确认需求来源 |  |  |  |  | none → 43, 46, 47, 48, 51, 52, 53 |
| 64 | 确定每个需求的唯一标识 |  |  |  |  | none → 57, 58, 59 |
| 66 | 编写需求规格说明书 |  |  |  |  | none → 62, 63, 64, 65 |
| 67 | 需求SRS评审 |  |  |  |  | none → 66 |
| 69 | 确定合格标准 | 2018-11-29 09:00 → 2018-12-01 09:00 (+2d) | 2018-11-29 10:00 → 2018-12-01 10:00 (+2d) |  |  | none → 67 |
| 70 | 编写用户手册 | 2018-11-30 09:00 → 2018-12-01 09:00 (+1d) | 2018-11-30 10:00 → 2018-12-01 10:00 (+1d) |  |  | none → 54, 67 |
| 71 | 进行需求测试 | 2018-12-03 09:00 → 2018-12-02 09:00 (-1d) | 2018-12-03 10:00 → 2018-12-02 10:00 (-1d) |  |  | none → 67 |
| 72 | **需求管理阶段** |  | 2018-12-13 18:00 → 2018-12-14 18:00 (+1d) | 10.25d → 11.25d |  |  |
| 74 | 对需求变更影响分析 | 2018-12-05 09:00 → 2018-12-05 10:00 | 2018-12-05 10:00 → 2018-12-05 11:00 |  |  | none → 73 |
| 75 | 建立基线并控制需求集合版本 | 2018-12-05 09:00 → 2018-12-05 11:00 | 2018-12-05 10:00 → 2018-12-05 12:00 |  |  | none → 74 |
| 76 | 记录需求变更的历史 |  |  |  |  | none → 75 |
| 77 | 衡量需求的稳定性 |  |  |  |  | none → 66, 69, 70 |
| 79 | 完善界面原型 |  |  |  |  | none → 54, 70 |
| 80 | 完善用户手册 | 2018-12-10 09:00 → 2018-12-11 09:00 (+1d) | 2018-12-10 10:00 → 2018-12-11 10:00 (+1d) |  |  | none → 79 |
| 81 | 验证变更 | 2018-12-10 09:00 → 2018-12-14 09:00 (+4d) | 2018-12-10 09:00 → 2018-12-14 09:00 (+4d) |  |  | none → 76, 77, 78, 79, 80 |
| 102 | uml界面原型学习 | 2018-11-01 09:00 → 2018-11-04 09:00 (+3d) | 2018-11-01 10:00 → 2018-11-04 10:00 (+3d) |  |  |  |
| 104 | **会议** |  | 2018-10-28 10:00 → 2018-11-04 10:00 (+7d) | 35.75d → 44d |  |  |
