How a schedule from MS Project changed from version to version. A marks actual dates.

## Version 1 (saved 2018-12-14, file PRD2018-G11-需求工程计划甘特图（基线）.mpp)

Note of the change: 提交项目结尾PPT部分

| ID | WBS | Task | Duration | Start | Finish | Predecessors | Complete | Total float | Constraint |
| --- | --- | --- | --- | --- | --- | --- | --- | --- | --- |
| 1 | 1 | **需求工程项目准备** | 55.25d | 2018-09-19 09:00 A | 2018-11-11 18:00 |  | 100% |  |  |
| 2 |  | 确定分组成员 | 1h | 2018-09-19 09:00 A | 2018-09-19 10:00 A |  | 100% |  |  |
| 3 |  | 课题选定 | 2d | 2018-09-19 10:00 A | 2018-09-21 10:00 A | 2 | 100% |  |  |
| 4 |  | 统一开发工具 | 1d | 2018-09-19 10:00 A | 2018-09-20 10:00 A | 2 | 100% |  |  |
| 5 |  | 确定小组成员职责 | 1d | 2018-09-19 10:00 A | 2018-09-20 10:00 A | 2 | 100% |  |  |
| 6 | 1.5 | **需求工程项目计划** | 47d | 2018-09-26 09:00 A | 2018-11-11 18:00 |  | 100% |  |  |
| 7 |  | 采用需求工程项目计划模板 | 0.1h | 2018-09-28 09:00 A | 2018-09-28 09:06 A |  | 100% |  |  |
| 8 |  | 人力资源管理计划 | 3h | 2018-09-29 09:00 A | 2018-09-29 12:00 A | 7 | 100% |  |  |
| 9 |  | 成本管理计划 | 2h | 2018-09-29 09:00 A | 2018-09-29 11:00 A | 7 | 100% |  |  |
| 10 |  | 沟通管理计划 | 3h | 2018-09-29 09:00 A | 2018-09-29 12:00 A | 7 | 100% |  |  |
| 11 |  | 风险管理计划 | 3h | 2018-09-29 09:00 A | 2018-09-29 12:00 A | 7 | 100% |  |  |
| 12 |  | 需求工程项目计划甘特图与wbs | 2h | 2018-09-29 09:00 A | 2018-09-29 11:00 A |  | 100% |  |  |
| 14 |  | 可行性分析报告起草 | 3h | 2018-09-30 15:00 A | 2018-09-30 18:00 A |  | 100% |  | finish no earlier than 2018-09-30 18:00 |
| 15 |  | 整合并检查需求工程项目计划 | 1h | 2018-09-30 09:00 A | 2018-09-30 10:00 A | 7, 8, 9, 10, 11 | 100% |  |  |
| 16 |  | 需求工程项目计划PPT起草 | 2h | 2018-09-30 09:00 A | 2018-09-30 11:00 A | 7, 8, 9, 10, 11 | 100% |  |  |
| 17 |  | 需求计划的项目概述错误信息修改 | 1h | 2018-10-13 09:00 A | 2018-10-13 10:00 A | 15 | 100% |  |  |
| 18 |  | 增加并细化了技术可行性分析的有关内容 | 1h | 2018-10-13 09:00 A | 2018-10-13 10:00 A | 14 | 100% |  |  |
| 19 |  | 修改人力资源管理部分 | 1h | 2018-10-14 09:00 A | 2018-10-14 10:00 A | 15, 8 | 100% |  |  |
| 20 |  | 修改wbs项目收尾部分 | 0.5h | 2018-10-18 09:00 A | 2018-10-18 09:30 A | 12 | 100% |  |  |
| 21 |  | 项目章程的编写 | 1h | 2018-10-20 09:00 A | 2018-10-20 10:00 A |  | 100% |  |  |
| 22 |  | 需求工程项目计划修改(更新培训日期，删除了不必要的内容) | 1.5h | 2018-10-20 09:00 A | 2018-10-20 10:30 A | 17 | 100% |  |  |
| 23 |  | 修改需求工程项目计划目录 | 0.1h | 2018-10-21 09:00 A | 2018-10-21 09:06 A | 22 | 100% |  |  |
| 24 |  | 质量保证计划编写 | 2h | 2018-10-27 09:00 A | 2018-10-27 11:00 A | 22 | 100% |  |  |
| 25 |  | 在需求工程项目计划增加范围、时间、质量管理计划 | 2h | 2018-10-27 09:00 A | 2018-10-27 11:00 A | 23 | 100% |  |  |
| 26 |  | 根据预评审对“人员配置管理计划”以及“干系人手册”进行修改 | 1h | 2018-10-27 09:00 A | 2018-10-27 10:00 A | 25 | 100% |  |  |
| 27 |  | 风险管理计划修改，新增采购计划 | 1h | 2018-10-27 09:00 A | 2018-10-27 10:00 A | 26 | 100% |  |  |
| 28 |  | 修改需求工程项目计划答辩PPT | 1h | 2018-10-28 09:00 A | 2018-10-28 10:00 A | 27 | 100% |  |  |
| 29 |  | 小组组内模拟评审，修改了相关文档错误内容 | 1h | 2018-10-30 09:00 A | 2018-10-30 10:00 A | 28 | 100% |  |  |
| 30 |  | 需求工程项目计划评审 | 0d | 2018-10-31 09:00 A | 2018-10-31 09:00 A | 29 | 100% |  |  |
| 31 |  | 修改风险管理计划以及预算 | 0.5h | 2018-11-01 09:00 A | 2018-11-01 09:30 A | 30 | 100% |  |  |
| 32 |  | 修改项目章程的批准 | 0.5h | 2018-11-04 09:00 A | 2018-11-04 09:30 A | 30 | 100% |  |  |
| 33 |  | 修改干系人手册与沟通管理计划 | 0.5h | 2018-11-01 09:00 A | 2018-11-01 09:30 A | 30 | 100% |  |  |
| 34 |  | 修改可行性分析报告增加SWOT分析 | 0.5h | 2018-11-04 09:00 A | 2018-11-04 09:30 A | 30 | 100% |  |  |
| 35 |  | 根据评审修改wbs | 0.5h | 2018-11-11 09:00 A | 2018-11-11 09:30 A |  | 100% |  |  |
| 36 |  | 小组个人对系统进行了解与构想 | 1h | 2018-11-11 09:00 A | 2018-11-11 10:00 A |  | 100% |  |  |
| 37 | 2 | **需求开发阶段** | 57.75d | 2018-11-01 09:00 | 2018-12-19 18:00 |  | 39% |  |  |
| 38 | 2.1 | **需求获取** | 17.62d | 2018-11-15 09:00 A | 2018-11-30 10:00 |  | 67% | 0d |  |
| 39 |  | 用户群分类 | 1h | 2018-11-15 09:00 A | 2018-11-15 10:00 A | 6, 30 | 100% |  |  |
| 40 |  | 定义愿景和范围 | 2h | 2018-11-24 09:00 A | 2018-11-24 11:00 A | 6, 30 | 100% |  |  |
| 41 |  | 初步制定功能点列表 | 1h | 2018-11-25 09:00 A | 2018-11-25 10:00 A | 6, 30 | 100% |  |  |
| 42 |  | 选择产品代表 | 1h | 2018-11-25 09:00 A | 2018-11-25 10:00 A | 6, 41 | 100% |  |  |
| 43 |  | 建立核心队伍 | 1h | 2018-11-25 09:00 A | 2018-11-25 10:00 A | 39, 41 | 100% |  |  |
| 44 |  | 项目下达者的访谈 | 1h | 2018-11-26 09:00 A | 2018-11-26 10:00 A | 41, 51, 43 | 100% |  |  |
| 45 |  | 绘制关联图 | 1h | 2018-11-27 09:00 A | 2018-11-27 10:00 A | 44 | 100% |  |  |
| 46 |  | 画用例图 | 1h | 2018-11-27 09:00 | 2018-11-27 10:00 | 44 |  |  |  |
| 47 |  | 教师需求第一次访谈 | 1h | 2018-11-27 09:00 A | 2018-11-27 10:00 A | 45, 46 | 100% |  |  |
| 48 |  | 学生需求第一次访谈 | 1h | 2018-11-28 09:00 A | 2018-11-28 10:00 A | 45, 46 | 100% |  |  |
| 49 |  | 游客需求第一次访谈 | 1h | 2018-11-28 09:00 A | 2018-11-28 10:00 A | 45, 46 | 100% |  |  |
| 50 |  | 更新用例图 | 1h | 2018-11-29 09:00 | 2018-11-29 10:00 | 45, 46, 47, 48, 49 |  |  |  |
| 51 |  | 制作界面原型 | 1h | 2018-11-29 09:00 A | 2018-11-29 10:00 A |  | 100% |  |  |
| 52 |  | 教师需求第二次访谈 | 1h | 2018-11-30 09:00 | 2018-11-30 10:00 | 47 |  |  |  |
| 53 |  | 学生需求第二次访谈 | 1h | 2018-11-30 09:00 | 2018-11-30 10:00 | 48 |  |  |  |
| 54 |  | 游客需求第二次访谈 | 1h | 2018-11-30 09:00 | 2018-11-30 10:00 | 49 |  |  |  |
| 55 |  | 更新界面原型 | 1h | 2018-11-30 09:00 | 2018-11-30 10:00 | 51 |  |  |  |
| 56 | 2.2 | **需求分析** | 3.75d | 2018-12-02 09:00 | 2018-12-05 10:00 |  |  | 0d |  |
| 57 |  | 创建开发原型 | 1h | 2018-12-02 09:00 | 2018-12-02 10:00 | 39, 40, 41, 42, 43 |  |  |  |
| 58 |  | 分析获取需求的可行性 | 1h | 2018-12-03 09:00 | 2018-12-03 10:00 | 44, 45, 46, 50, 51, 55 |  |  |  |
| 59 |  | 确定需求的优先级 | 1h | 2018-12-04 09:00 | 2018-12-04 10:00 | 58 |  |  |  |
| 60 |  | 需求建模 | 1h | 2018-12-04 09:00 | 2018-12-04 10:00 | 58, 59 |  |  |  |
| 61 |  | 编写数据字典 | 1h | 2018-12-05 09:00 | 2018-12-05 10:00 | 57, 58, 59, 60 |  |  |  |
| 62 | 2.3 | **需求规范规格** | 25.75d | 2018-11-21 09:00 | 2018-12-12 18:00 |  |  |  |  |
| 63 |  | 使用需求规格说明书的模版 | 1h | 2018-12-07 09:00 | 2018-12-07 10:00 |  |  |  |  |
| 64 |  | 确认需求来源 | 1h | 2018-12-08 09:00 | 2018-12-08 10:00 | 44, 47, 48, 49, 52, 53, 54 |  |  |  |
| 65 |  | 确定每个需求的唯一标识 | 1h | 2018-12-09 09:00 | 2018-12-09 10:00 | 58, 59, 60 |  |  |  |
| 66 |  | 记录非功能需求 | 1h | 2018-12-10 09:00 | 2018-12-10 10:00 |  |  |  |  |
| 67 |  | 编写需求规格说明书 | 1h | 2018-12-11 09:00 | 2018-12-11 10:00 | 63, 64, 65, 66 |  |  |  |
| 68 |  | 需求SRS评审 | 0d | 2018-12-12 09:00 | 2018-12-12 09:00 | 67 |  |  |  |
| 69 | 2.4 | **需求规格审核** | 9.25d | 2018-12-12 09:00 | 2018-12-19 18:00 |  |  |  |  |
| 70 |  | 确定合格标准 | 1h | 2018-12-13 09:00 | 2018-12-13 10:00 | 68 |  |  |  |
| 71 |  | 编写用户手册 | 1h | 2018-12-14 09:00 | 2018-12-14 10:00 | 55, 68 |  |  |  |

| ID | WBS | Task | Duration | Start | Finish | Predecessors | Total float |
| --- | --- | --- | --- | --- | --- | --- | --- |
| 72 |  | 进行需求测试 | 1h | 2018-12-14 09:00 | 2018-12-14 10:00 | 68 |  |
| 73 | 3 | **需求管理阶段** | 11.25d | 2018-12-20 09:00 | 2018-12-29 17:00 |  |  |
| 74 |  | 建立需求变更控制过程 | 1h | 2018-12-18 09:00 | 2018-12-18 10:00 | 72 |  |
| 75 |  | 对需求变更影响分析 | 1h | 2018-12-21 09:00 | 2018-12-21 10:00 | 74 |  |
| 76 |  | 建立基线并控制需求集合版本 | 1h | 2018-12-22 09:00 | 2018-12-22 10:00 | 75 |  |
| 77 |  | 记录需求变更的历史 | 1h | 2018-12-23 09:00 | 2018-12-23 10:00 | 76 |  |
| 78 |  | 衡量需求的稳定性 | 1h | 2018-12-22 09:00 | 2018-12-22 10:00 | 67, 70, 71 |  |
| 79 |  | 重新编写测试用例 | 1h | 2018-12-22 09:00 | 2018-12-22 10:00 |  |  |
| 80 |  | 完善界面原型 | 1h | 2018-12-23 09:00 | 2018-12-23 10:00 | 55, 71 |  |
| 81 |  | 完善用户手册 | 1h | 2018-12-24 09:00 | 2018-12-24 10:00 | 80 |  |
| 82 |  | 验证变更评审 | 0d | 2018-12-25 09:00 | 2018-12-25 09:00 | 77, 78, 79, 80, 81 |  |
| 83 | 4 | **项目收尾** | 19.25d | 2019-01-05 09:00 | 2019-01-20 18:00 |  |  |
| 84 |  | 制作最终评审PPT | 4h | 2019-01-05 09:00 | 2019-01-05 13:00 | 82 |  |
| 85 |  | 小组成员个人总结 | 1h | 2019-01-06 09:00 | 2019-01-06 10:00 | 82 |  |
| 86 |  | 小组总体工作总结 | 2h | 2019-01-12 09:00 | 2019-01-12 11:00 | 82 |  |
| 87 |  | 最终评审PPT答辩 | 0d | 2019-01-20 09:00 | 2019-01-20 09:00 | 84, 85, 86 |  |
| 88 | 5 | **培训与翻转课堂** | 38.25d | 2018-09-28 09:00 | 2018-11-06 09:00 |  | 0d |
| 89 |  | 负责讲解project的使用 | 2h | 2018-09-28 09:00 | 2018-09-28 11:00 |  |  |
| 90 |  | 负责讲解word文档规范排版 | 1h | 2018-09-29 09:00 | 2018-09-29 10:00 |  |  |
| 91 |  | uml概述的学习以及PPT制作 | 1h | 2018-10-13 09:00 | 2018-10-13 10:00 |  |  |
| 92 |  | 1.7UML2.0新特性+目录 | 2h | 2018-10-14 09:00 | 2018-10-14 11:00 | 91 |  |
| 93 |  | 完成1.1-1.4UML的结构制作 | 2h | 2018-10-14 09:00 | 2018-10-14 11:00 | 91 |  |
| 94 |  | UML图PPT的初步编写 | 2h | 2018-10-14 09:00 | 2018-10-14 11:00 | 91 |  |
| 95 |  | 完成UML视图及系统开发阶段部分 | 2h | 2018-10-14 09:00 | 2018-10-14 11:00 | 91 |  |
| 96 |  | uml概述PPT答辩 | 0d | 2018-10-17 09:00 | 2018-10-17 09:00 |  |  |
| 97 |  | uml概述PPT修改 | 0.5h | 2018-10-19 09:00 | 2018-10-19 09:30 | 92, 93, 94, 95 |  |
| 98 |  | uml工具的学习 | 1h | 2018-10-21 09:00 | 2018-10-21 10:00 |  |  |
| 99 |  | uml工具翻转PPT制作 | 1h | 2018-10-21 09:00 | 2018-10-21 10:00 |  |  |
| 100 |  | uml工具翻转PPT答辩 | 0d | 2018-10-24 09:00 | 2018-10-24 09:00 |  |  |
| 101 |  | uml建模基础学习 | 1h | 2018-10-25 09:00 | 2018-10-25 10:00 |  |  |
| 102 |  | 用例图、类图PPT制作 | 2h | 2018-10-25 10:00 | 2018-10-25 12:00 | 101 | 103.38d |
| 103 |  | 通信图PPT制作 | 1h | 2018-10-27 09:00 | 2018-10-27 10:00 | 101 |  |
| 104 |  | 部署图PPT制作 | 1h | 2018-10-28 09:00 | 2018-10-28 10:00 | 101 |  |
| 105 |  | 状态机图PPT制作 | 1h | 2018-10-28 09:00 | 2018-10-28 10:00 | 101 |  |
| 106 |  | 顺序图PPT制作 | 1h | 2018-10-27 09:00 | 2018-10-27 10:00 | 101 |  |
| 107 |  | uml图PPT答辩 | 0d | 2018-10-31 09:00 | 2018-10-31 09:00 | 102, 103, 104, 105, 106 |  |
| 108 |  | uml界面原型学习 | 1h | 2018-11-04 09:00 | 2018-11-04 10:00 |  |  |
| 109 |  | uml界面原型翻转 | 0d | 2018-11-06 09:00 | 2018-11-06 09:00 | 108 |  |
| 110 | 6 | **会议** | 116.62d | 2018-09-21 09:00 | 2019-01-05 10:00 |  | 0d |
| 111 |  | 第1次会议（明确贯穿项目的职责） | 1h | 2018-09-21 09:00 | 2018-09-21 10:00 |  |  |
| 112 |  | 第2次会议(任务的安排与约定) | 1h | 2018-09-28 09:00 | 2018-09-28 10:00 |  |  |
| 113 |  | 第3次会议(任务的安排与约定) | 1h | 2018-10-12 09:00 | 2018-10-12 10:00 |  |  |
| 114 |  | 第4次会议(任务的安排与约定) | 1h | 2018-10-19 09:00 | 2018-10-19 10:00 |  |  |
| 115 |  | 第5次会议(阶段性检查与审核) | 1h | 2018-10-20 09:00 | 2018-10-20 10:00 |  |  |
| 116 |  | 第6次会议(阶段性检查与审核) | 1h | 2018-10-28 09:00 | 2018-10-28 10:00 |  |  |
| 117 |  | 第7次会议(阶段性检查与审核) | 1h | 2018-11-04 09:00 | 2018-11-04 10:00 |  |  |
| 118 |  | 第8次会议(周任务安排) | 0.5h | 2018-11-10 09:00 | 2018-11-10 09:30 |  |  |
| 119 |  | 第9次会议 | 1h | 2018-11-17 09:00 | 2018-11-17 10:00 |  |  |
| 120 |  | 第9次会议 | 1h | 2018-11-24 09:00 | 2018-11-24 10:00 |  |  |
| 121 |  | 第11次会议 | 1h | 2018-12-01 09:00 | 2018-12-01 10:00 |  |  |
| 122 |  | 第12次会议 | 1h | 2018-12-08 09:00 | 2018-12-08 10:00 |  |  |
| 123 |  | 第13次会议 | 1h | 2018-12-15 09:00 | 2018-12-15 10:00 |  |  |
| 124 |  | 第14次会议 | 1h | 2018-12-22 09:00 | 2018-12-22 10:00 |  |  |
| 125 |  | 第15次会议 | 1h | 2018-12-29 09:00 | 2018-12-29 10:00 |  |  |
| 126 |  | 第16次会议 | 1h | 2019-01-05 09:00 | 2019-01-05 10:00 |  |  |
| 127 |  | <新任务> | 1d? | 2018-09-21 09:00 | 2018-09-22 09:00 |  |  |
| 128 |  | <新任务> | 1d? | 2018-09-21 09:00 | 2018-09-22 09:00 |  |  |
| 129 |  | <新任务> | 1d? | 2018-09-21 09:00 | 2018-09-22 09:00 |  |  |
| 130 |  | <新任务> | 1d? | 2018-09-21 09:00 | 2018-09-22 09:00 |  |  |

## Version 2 (saved 2019-01-15, file PRD2018-G11-需求工程计划甘特图（实际）.mpp)

Note of the change: 添加变更测试用例

Last finish stays 2019-01-20. Complete tasks 44 → 42.

Added:

| ID | Task | Duration | Start | Finish | Predecessors | Resources |
| --- | --- | --- | --- | --- | --- | --- |
| 37 | 更新wbs输入输出表 | 2h | 2018-09-26 09:00 | 2018-09-26 11:00 |  | 黄为波; 江亮儒 |
| 38 | 在计划中添加teambuilding相关信息 | 0.5h | 2018-09-26 09:00 | 2018-09-26 09:30 |  | 蔡峰 |
| 39 | 更新干系人手册 | 0.5h | 2018-09-26 09:00 | 2018-09-26 09:30 |  | 蔡峰 |
| 51 | 制作app界面原型初步 | 8h | 2018-12-09 09:00 A | 2018-12-09 17:00 A | 45, 50 | 黄为波; 江亮儒 |
| 52 | 制作web界面原型初步 | 14h | 2018-12-15 09:00 | 2018-12-16 10:00 |  | 陈子卿 |
| 53 | 修改愿景与范围文档版本范围 | 1h | 2018-11-15 09:00 | 2018-11-15 10:00 |  |  |
| 54 | 修改愿景与范围文档上下文图部分 | 1h | 2018-11-15 09:00 | 2018-11-15 10:00 |  |  |
| 55 | 补充愿景文档干系人，项目优先级，客户概貌 | 1h | 2018-11-15 09:00 | 2018-11-15 10:00 |  |  |
| 56 | 教师代表的访谈 | 1h | 2018-11-15 09:00 | 2018-11-15 10:00 |  |  |
| 57 | 游客代表的访谈 | 0.5h | 2018-11-15 09:00 | 2018-11-15 09:30 |  |  |
| 58 | 教师代表的访谈 | 1h | 2018-12-23 09:00 | 2018-12-23 10:00 |  | 小组全体成员 |
| 59 | 学生代表的访谈 | 0.5h | 2018-11-15 09:00 | 2018-11-15 09:30 |  |  |
| 60 | 管理员代表的访谈 | 0.5h | 2018-12-21 09:00 | 2018-12-21 09:30 |  | 小组全体成员 |
| 61 | 教师代表的访谈 | 1h | 2019-01-04 09:00 | 2019-01-04 10:00 |  | 小组全体成员 |
| 62 | 1.4教师代表第二次访谈 | 0.2h | 2019-01-04 09:00 | 2019-01-04 09:12 |  | 黄为波; 蔡峰 |
| 63 | 管理员代表的访谈 | 0.5h | 2018-12-28 09:00 | 2018-12-28 09:30 |  | 小组全体成员 |
| 68 | 编写e-r图，数据库设计 | 2h | 2018-12-23 09:00 | 2018-12-23 11:00 |  | 黄为波 |
| 69 | 编写数据字典 | 2h | 2018-12-23 09:00 | 2018-12-23 11:00 |  | 黄为波 |
| 70 | 编写游客用例图 | 1d | 2018-12-23 09:00 | 2018-12-23 17:00 |  | 黄为波 |
| 71 | 编写游客对话框图 | 2h | 2018-12-23 09:00 | 2018-12-23 11:00 |  | 黄为波 |
| 72 | 编写游客测试用例 | 2h | 2018-12-23 09:00 | 2018-12-23 11:00 |  | 黄为波 |
| 73 | 编写教师，学生用例图 | 4h | 2018-12-23 09:00 | 2018-12-23 13:00 |  | 江亮儒 |
| 74 | 编写教师，学生顺序图 | 4h | 2018-12-24 09:00 | 2018-12-24 14:00 |  | 江亮儒 |
| 75 | 编写教师，学生对话框图 | 4h | 2018-12-24 09:00 | 2018-12-24 14:00 |  | 江亮儒 |
| 76 | 编写管理员顺序图 | 4h | 2018-12-24 09:00 | 2018-12-24 14:00 |  | 蔡峰 |
| 77 | 编写管理员对话框图 | 4h | 2018-12-24 09:00 | 2018-12-24 14:00 |  | 蔡峰 |
| 78 | 制作用户手册 | 2h | 2018-12-23 09:00 | 2018-12-23 11:00 |  | 陈子卿 |
| 80 | 制作管理员界面原型 | 1d? | 2018-12-24 09:00 | 2018-12-25 09:00 |  |  |
| 81 | 界面原型的修改 | 12h | 2018-12-29 09:00 | 2018-12-29 21:00 |  | 陈子卿; 黄为波 |
| 82 | 添加新版测试用例 | 4h | 2019-01-01 09:00 | 2019-01-01 14:00 |  | 黄为波 |
| 83 | 修改web界面原型 | 8h | 2019-01-04 09:00 | 2019-01-05 09:00 |  | 黄为波 |
| 84 | 修改app界面原型 | 6h | 2019-01-06 09:00 | 2019-01-06 15:00 |  | 黄为波; 江亮儒 |
| 88 | 编写项目优先级打分表 | 2h | 2019-01-08 09:00 | 2019-01-08 11:00 |  | 江亮儒 |
| 98 | 根据最新界面更新用例图描述 | 5h | 2019-01-08 09:00 | 2019-01-08 15:00 |  | 江亮儒 |
| 99 | 编写项目优先级打分表 | 2h | 2019-01-08 09:00 | 2019-01-08 11:00 |  | 江亮儒 |
| 103 | jad会议 | 1h | 2019-01-06 09:00 | 2019-01-06 10:00 |  | 小组全体成员 |
| 112 | 建立CCB变更控制委员会 | 1d | 2019-01-06 09:00 | 2019-01-06 17:00 |  | 小组全体成员 |
| 113 | 向CCB委员会主席确认变更需求申请 | 1h | 2019-01-09 09:00 | 2019-01-09 10:00 |  | 小组全体成员 |
| 114 | 向CCB委员会开发者代表确定技术可行性 | 1h | 2019-01-09 09:00 | 2019-01-09 10:00 |  | 小组全体成员 |

Removed: 41 初步制定功能点列表; 42 选择产品代表; 43 建立核心队伍; 44 项目下达者的访谈; 45 绘制关联图; 46 画用例图; 47 教师需求第一次访谈; 48 学生需求第一次访谈; 49 游客需求第一次访谈; 50 更新用例图; 51 制作界面原型; 52 教师需求第二次访谈; 53 学生需求第二次访谈; 54 游客需求第二次访谈; 77 记录需求变更的历史; 78 衡量需求的稳定性

Changed:

| ID | Task | Start | Finish | Duration | Complete | Predecessors | Other |
| --- | --- | --- | --- | --- | --- | --- | --- |
| 1 | **需求工程项目准备** |  |  |  | 100% → 96% |  |  |
| 6 | **需求工程项目计划** |  |  |  | 100% → 94% |  |  |
| 40 | **需求开发阶段** |  |  |  | 39% → 7% |  |  |
| 41 | **需求获取** |  | 2018-11-30 10:00 → 2019-01-04 10:00 (+35d) | 17.62d → 58.88d | 67% → 40% |  |  |
| 43 | 团队建设 | 2018-11-24 09:00 → 2018-11-20 09:00 (-4d) | 2018-11-24 10:00 → 2018-11-20 11:00 (-4d) | 1h → 2h |  |  | was named 第9次会议 |
| 44 | 定义愿景和范围并编写文档 |  | 2018-11-24 11:00 A → 2018-11-24 10:00 A | 2h → 1h |  |  | was named 定义愿景和范围 |
| 45 | 学生代表访谈 | 2018-12-08 09:00 → 2018-11-15 09:00 A (-23d) | 2018-12-08 10:00 → 2018-11-15 10:00 A (-23d) |  | 0% → 100% |  | was named 第12次会议; resources 小组全体成员 → 黄为波 |
| 46 | 修改愿景与范围文档 | 2018-12-01 09:00 → 2018-11-30 09:00 A (-1d) | 2018-12-01 10:00 → 2018-11-30 10:00 A (-1d) |  | 0% → 100% |  | was named 第11次会议; resources 小组全体成员 → 陈子卿; 江亮儒; 黄为波; 蔡峰; 苏雨豪 |
| 47 | 与项目下达者确定愿景与范围 | 2018-12-15 09:00 → 2018-12-01 09:00 A (-14d) | 2018-12-15 10:00 → 2018-12-01 10:00 A (-14d) |  | 0% → 100% | none → 44 | was named 第13次会议 |
| 48 | 修改愿景与范围文档 | 2018-12-22 09:00 → 2018-12-02 09:00 A (-20d) | 2018-12-22 10:00 → 2018-12-02 10:00 A (-20d) |  | 0% → 100% | none → 47 | was named 第14次会议; resources 小组全体成员 → 江亮儒; 苏雨豪 |
| 49 | 制作并发送教师邀请函与游客邀请函与学生代表邀请函 | 2018-12-29 09:00 → 2018-12-01 09:00 A (-28d) | 2018-12-29 10:00 → 2018-12-01 10:00 A (-28d) |  | 0% → 100% |  | was named 第15次会议; resources 小组全体成员 → 蔡峰 |
| 50 | 教师代表访谈 | 2019-01-05 09:00 → 2018-12-02 10:00 A (-34d) | 2019-01-05 10:00 → 2018-12-02 11:00 A (-34d) |  | 0% → 100% | none → 48 | was named 第16次会议; resources 小组全体成员 → none |
| 64 | **需求分析** | 2018-12-02 09:00 → 2018-12-09 09:00 (+7d) | 2018-12-05 10:00 → 2019-01-08 11:00 (+34d) | 3.75d → 35.88d |  |  |  |
| 65 | 创建开发原型 | 2018-12-02 09:00 → 2018-12-09 09:00 (+7d) | 2018-12-02 10:00 → 2018-12-09 10:00 (+7d) |  |  | 42, 44, 初步制定功能点列表, 选择产品代表, 建立核心队伍 → 42, 44 |  |
| 66 | 分析获取需求的可行性 | 2018-12-03 09:00 → 2018-12-10 09:00 (+7d) | 2018-12-03 10:00 → 2018-12-10 10:00 (+7d) |  |  | 项目下达者的访谈, 绘制关联图, 画用例图, 更新用例图, 制作界面原型, 79 → none |  |
| 67 | 确定需求的优先级 | 2018-12-04 09:00 → 2018-12-11 09:00 (+7d) | 2018-12-04 10:00 → 2018-12-11 10:00 (+7d) |  |  |  |  |
| 79 | 更新界面原型 | 2018-11-30 09:00 → 2018-12-23 09:00 (+23d) | 2018-11-30 10:00 → 2018-12-23 13:00 (+23d) | 1h → 4h |  | 制作界面原型 → none | resources 小组全体成员 → 陈子卿; baseline start 2018-11-14 09:00 → none; baseline finish 2018-11-14 15:00 → none |
| 85 | <新任务> | 2018-09-21 09:00 → 2018-12-09 09:00 (+79d) | 2018-09-22 09:00 → 2018-12-09 17:00 (+78d) |  |  |  |  |
| 86 | 需求建模 | 2018-12-04 09:00 → 2018-12-11 09:00 (+7d) | 2018-12-04 10:00 → 2018-12-11 10:00 (+7d) |  |  |  |  |
| 87 | 编写数据字典 | 2018-12-05 09:00 → 2018-12-09 09:00 (+4d) | 2018-12-05 10:00 → 2018-12-14 18:00 (+9d) | 1h → 53h |  |  |  |
| 89 | <新任务> | 2018-09-21 09:00 → 2018-12-09 09:00 (+79d) | 2018-09-22 09:00 → 2018-12-09 17:00 (+78d) |  |  |  |  |
| 94 | 确认需求来源 |  |  |  |  | 项目下达者的访谈, 教师需求第一次访谈, 学生需求第一次访谈, 游客需求第一次访谈, 教师需求第二次访谈, 学生需求第二次访谈, 游客需求第二次访谈 → none |  |
| 100 | <新任务> | 2018-09-21 09:00 → 2018-11-21 09:00 (+61d) | 2018-09-22 09:00 → 2018-11-22 09:00 (+61d) |  |  |  |  |
| 105 | 编写用户手册 |  |  |  |  | 79, 101 → 101 |  |
| 107 | **需求管理阶段** | 2018-12-20 09:00 → 2019-01-06 09:00 (+17d) | 2018-12-29 17:00 → 2019-01-15 12:00 (+17d) |  |  |  |  |
| 108 | 建立需求变更控制过程 | 2018-12-18 09:00 → 2019-01-07 09:00 (+20d) | 2018-12-18 10:00 → 2019-01-07 10:00 (+20d) |  |  |  |  |
| 109 | 对需求变更影响分析 | 2018-12-21 09:00 → 2019-01-07 09:00 (+17d) | 2018-12-21 10:00 → 2019-01-07 10:00 (+17d) |  |  |  |  |
| 110 | 建立基线并控制需求集合版本 | 2018-12-22 09:00 → 2019-01-07 09:00 (+16d) | 2018-12-22 10:00 → 2019-01-07 10:00 (+16d) |  |  |  |  |
| 111 | 重新编写测试用例 | 2018-12-22 09:00 → 2019-01-10 09:00 (+19d) | 2018-12-22 10:00 → 2019-01-10 10:00 (+19d) |  |  |  |  |
| 115 | 完善界面原型 | 2018-12-23 09:00 → 2019-01-09 09:00 (+17d) | 2018-12-23 10:00 → 2019-01-09 10:00 (+17d) |  |  | 79, 105 → 105 |  |
| 116 | 完善用户手册 | 2018-12-24 09:00 → 2019-01-09 09:00 (+16d) | 2018-12-24 10:00 → 2019-01-09 10:00 (+16d) |  |  |  |  |
| 117 | 验证变更评审 | 2018-12-25 09:00 → 2019-01-11 09:00 (+17d) | 2018-12-25 09:00 → 2019-01-11 09:00 (+17d) |  |  | 记录需求变更的历史, 衡量需求的稳定性, 111, 115, 116 → 111, 115, 116 |  |
| 145 | **会议** |  | 2019-01-05 10:00 → 2018-12-09 10:00 (-27d) | 116.62d → 85.25d |  |  |  |
| 153 | 第8次会议(周任务安排) | 2018-11-10 09:00 → 2018-11-13 09:00 (+3d) | 2018-11-10 09:30 → 2018-11-13 09:30 (+3d) |  |  |  |  |
| 154 | 第9次会议 | 2018-11-17 09:00 → 2018-11-23 09:00 (+6d) | 2018-11-17 10:00 → 2018-11-23 10:00 (+6d) |  |  |  |  |
| 155 | 第10次会议 | 2018-09-21 09:00 → 2018-12-09 09:00 (+79d) | 2018-09-22 09:00 → 2018-12-09 10:00 (+78d) | 1d? → 1h |  |  | was named <新任务>; resources none → 小组全体成员 |

## Version 3 (saved 2019-01-15, file PRD2018-G11-需求工程计划甘特图（实际）.mpp)

Note of the change: 甘特图修改

Last finish stays 2019-01-20. Complete tasks 42 → 37.

Added:

| ID | Task | Duration | Start | Finish | Predecessors | Resources |
| --- | --- | --- | --- | --- | --- | --- |
| 38 | 根据最新标准修改了项目计划中的时薪 | 0.5h | 2018-10-31 09:30 | 2018-10-31 10:00 | 37 | 江亮儒 |
| 39 | 修改了wbs结构 | 0.5h | 2018-12-14 09:00 | 2018-12-14 09:30 | 35 | 黄为波 |
| 40 | 重新编写了wbs-io表 | 1h | 2018-12-16 09:00 | 2018-12-16 10:00 | 30, 39 | 黄为波; 江亮儒 |
| 53 | 修改了愿景与范围文档确定的干系人 | 0.2d | 2018-12-14 09:00 | 2018-12-14 10:36 | 49 | 陈子卿 |
| 61 | 教师代表访谈5 | 1h | 2019-01-04 09:00 | 2019-01-04 10:00 | 66, 70 | 小组全体成员 |
| 62 | 教师代表访谈6 | 1h | 2019-01-04 09:00 | 2019-01-04 10:00 | 73 | 小组全体成员 |
| 67 | 修改管理员界面原型 | 2h | 2018-12-31 09:00 | 2018-12-31 11:00 | 63 | 陈子卿 |
| 68 | 制作手机界面原型 | 8h | 2019-01-01 09:00 | 2019-01-02 09:00 | 60 | 苏雨豪 |
| 71 | 管理员代表访谈3 | 0.5h | 2019-01-02 09:00 | 2019-01-02 09:30 | 67 | 小组全体成员 |
| 72 | 修改愿景与范围文档 | 0.5h | 2019-01-03 09:00 | 2019-01-03 09:30 | 60 | 江亮儒 |
| 73 | 修改web界面原型 | 10h | 2019-01-04 10:00 | 2019-01-05 12:00 | 61 | 黄为波 |
| 75 | 修改管理员界面原型 | 1.5h | 2019-01-06 09:00 | 2019-01-06 10:30 | 71 | 陈子卿 |
| 76 | 制作jad会议PPT | 1h | 2019-01-06 09:00 | 2019-01-06 10:00 | 73, 74, 75 | 蔡峰 |
| 91 | 编写管理员用例描述 | 4h | 2018-12-24 09:00 | 2018-12-24 14:00 | 59, 51, 52 | 蔡峰 |
| 92 | 编写管理员测试用例 | 4h | 2018-12-24 09:00 | 2018-12-24 14:00 | 59, 51, 52 | 蔡峰 |
| 94 | 重写教师学生游客用例说明 | 8h | 2019-01-06 09:00 | 2019-01-06 17:00 | 73, 74, 75 | 江亮儒 |
| 95 | 重写教师学生游客对话框图，顺序图 | 8h | 2019-01-07 09:00 | 2019-01-08 09:00 | 73, 74, 75 | 江亮儒 |
| 99 | 添加更加精确的用例描述 | 2h | 2019-01-10 09:00 | 2019-01-10 11:00 |  | 江亮儒 |
| 100 | 修改了web端界面原型 | 2h | 2018-12-13 09:00 | 2018-12-13 11:00 | 73 | 黄为波 |
| 101 | 编写并上传管理员用例相关文档 | 8h | 2019-01-11 09:00 | 2019-01-12 09:00 | 73, 74, 75 | 蔡峰 |
| 102 | 编写管理员顺序图 | 4h | 2019-01-11 09:00 | 2019-01-11 14:00 | 73, 74, 75 | 蔡峰 |
| 111 | 编写app用户手册 | 6h | 2019-01-13 10:30 | 2019-01-13 16:30 | 134 | 江亮儒 |
| 112 | 修改界面原型存在的BUG | 1h | 2019-01-13 16:30 | 2019-01-13 17:30 | 111 | 陈子卿 |
| 113 | 更新用户手册 | 1h | 2019-01-13 17:30 | 2019-01-13 18:30 | 112 | 陈子卿 |
| 114 | 重新编写数据字典以及数据库设计 | 5h | 2019-01-13 18:30 | 2019-01-14 10:30 | 73, 74, 75, 113 | 黄为波 |
| 115 | 增加APP测试用例 | 2h | 2019-01-14 09:00 | 2019-01-14 11:00 | 126 | 黄为波 |
| 116 | 增加管理员部分测试用例 | 4h | 2019-01-14 09:00 | 2019-01-14 14:00 | 73, 74, 75 | 蔡峰 |
| 118 | 编写变更管理文档 | 1h | 2019-01-08 09:00 | 2019-01-08 10:00 |  | 苏雨豪 |
| 119 | 编写变更申请书 | 0.5h | 2019-01-08 09:00 | 2019-01-08 09:30 |  | 苏雨豪 |
| 120 | 修改变更管理文档 | 0.5h | 2019-01-09 09:00 | 2019-01-09 09:30 |  | 江亮儒 |
| 121 | 将需求导入DOORS需求管理工具 | 2h | 2019-01-09 09:30 | 2019-01-09 11:30 | 73, 74, 75, 94, 95, 118, 119, 120 | 苏雨豪 |
| 122 | 建立各个需求之间的关联 | 6h | 2019-01-09 11:30 | 2019-01-10 09:30 | 121 | 苏雨豪 |
| 123 | 分析变更的需求的影响 | 2h | 2019-01-10 09:30 | 2019-01-10 11:30 | 122 | 苏雨豪 |
| 124 | 修改变更申请书 | 1h | 2019-01-09 09:00 | 2019-01-09 10:00 | 119, 123, 138 | 苏雨豪 |
| 132 | 制作验证变更评审PPT | 4h | 2019-01-10 16:30 | 2019-01-11 11:30 | 131 | 小组全体成员 |
| 133 | 验证变更内部评审 | 0.5h | 2019-01-11 11:30 | 2019-01-11 12:00 | 132 | 小组全体成员 |
| 135 | 将文档导入需求管理工具 | 3h | 2019-01-14 09:00 | 2019-01-14 12:00 | 134 | 苏雨豪 |
| 136 | 建立变更需求与文档中各个模块的链接关系 | 6h | 2019-01-14 09:00 | 2019-01-14 16:00 | 108, 134 | 苏雨豪 |
| 137 | 分析新的需求影响 | 3h | 2019-01-15 09:00 | 2019-01-15 12:00 | 135, 136 | 苏雨豪 |
| 138 | 分析变更的需求的影响 | 2h | 2019-01-15 09:00 | 2019-01-15 11:00 |  | 苏雨豪 |
| 140 | 完成管理员相关用例文档的修改 | 6h | 2019-01-14 09:00 | 2019-01-14 16:00 | 130, 131, 132, 133, 134 | 蔡峰 |
| 141 | 完成管理员相关测试的修改 | 3h | 2019-01-14 09:00 | 2019-01-14 12:00 | 130, 131, 132, 133, 134 | 蔡峰 |
| 168 | 制作学习PPTUML基础3 | 4h | 2018-12-09 09:00 | 2018-12-09 13:00 |  | 小组全体成员 |
| 169 | 制作学习PPTUML基础4 | 3h | 2018-12-28 09:00 | 2018-12-28 12:00 |  | 蔡峰; 小组全体成员 |
| 181 | 第11次会议 | 1h | 2018-12-16 09:00 | 2018-12-16 10:00 |  | 小组全体成员 |
| 182 | 第12次会议 | 1h | 2018-12-21 09:00 | 2018-12-21 10:00 |  | 小组全体成员 |
| 183 | 第13次会议 | 1h | 2018-12-26 09:00 | 2018-12-26 10:00 |  | 小组全体成员 |
| 184 | 第14次会议 | 1h | 2018-12-28 09:00 | 2018-12-28 10:00 |  | 小组全体成员 |
| 185 | 第15次会议 | 1h | 2019-01-04 09:00 | 2019-01-04 10:00 |  | 小组全体成员 |
| 186 | 第16次会议 | 1h | 2019-01-10 09:00 | 2019-01-10 10:00 |  | 小组全体成员 |

Removed: 37 更新wbs输入输出表; 38 在计划中添加teambuilding相关信息; 50 教师代表访谈; 53 修改愿景与范围文档版本范围; 54 修改愿景与范围文档上下文图部分; 55 补充愿景文档干系人，项目优先级，客户概貌; 65 创建开发原型; 67 确定需求的优先级; 85 <新任务>; 86 需求建模; 93 使用需求规格说明书的模版; 94 确认需求来源; 100 <新任务>; 104 确定合格标准; 106 进行需求测试; 108 建立需求变更控制过程; 109 对需求变更影响分析

Changed:

| ID | Task | Start | Finish | Duration | Complete | Total float | Predecessors | Other |
| --- | --- | --- | --- | --- | --- | --- | --- | --- |
| 1 | **需求工程项目准备** |  | 2018-11-11 18:00 → 2018-12-17 18:00 (+36d) | 55.25d → 98d? | 96% → 95% |  |  |  |
| 6 | **需求工程项目计划** |  | 2018-11-11 18:00 → 2018-12-17 18:00 (+36d) | 47d → 89.75d? | 94% → 91% |  |  |  |
| 22 | 需求工程项目计划修改(更新培训日期，删除了不必要的内容) |  | 2018-10-20 10:30 A → 2018-10-20 11:00 | 1.5h → 2h | 100% → 75% |  |  |  |
| 31 | 修改风险管理计划以及预算 |  | 2018-11-01 09:30 A → 2018-11-01 10:00 | 0.5h → 1h | 100% → 50% |  |  |  |
| 32 | 修改项目章程的批准 |  | 2018-11-04 09:30 A → 2018-11-04 10:00 | 0.5h → 1h | 100% → 50% |  |  |  |
| 33 | 修改干系人手册与沟通管理计划 |  | 2018-11-01 09:30 A → 2018-11-01 10:00 | 0.5h → 1h | 100% → 50% |  |  |  |
| 35 | 根据评审修改wbs |  |  |  |  |  | none → 30, 12 |  |
| 37 | 更新干系人手册 | 2018-09-26 09:00 → 2018-10-31 09:00 (+35d) | 2018-09-26 09:30 → 2018-10-31 09:30 (+35d) |  |  |  | none → 30 |  |
| 41 | **需求开发阶段** | 2018-11-01 09:00 → 2018-11-15 09:00 A (+14d) | 2018-12-19 18:00 → 2019-01-15 18:00 (+27d) | 57.75d → 73.25d? | 7% → 6% |  |  |  |
| 42 | **需求获取** |  | 2019-01-04 10:00 → 2019-01-06 18:00 (+2d) | 58.88d → 62.5d? | 40% → 14% | 0d → none |  |  |
| 45 | 定义愿景和范围并编写文档 | 2018-11-24 09:00 A → 2018-11-15 09:00 A (-9d) | 2018-11-24 10:00 A → 2018-11-15 10:00 A (-9d) |  |  |  |  |  |
| 47 | 修改愿景与范围文档 |  |  |  |  |  | none → 54 |  |
| 49 | 修改愿景与范围文档 |  |  |  |  |  | 48 → 48, 54 |  |
| 51 | 制作app界面原型初步 |  |  | 8h → 6h |  |  | 46, 教师代表访谈 → 46, 56 |  |
| 52 | 制作web界面原型初步 | 2018-12-15 09:00 → 2018-12-16 09:00 (+1d) | 2018-12-16 10:00 → 2018-12-17 10:00 (+1d) |  |  |  | none → 56 |  |
| 54 | 教师代表的访谈1 | 2018-11-15 09:00 → 2018-11-28 09:00 (+13d) | 2018-11-15 10:00 → 2018-11-28 10:00 (+13d) |  |  |  | none → 50 | was named 教师代表的访谈; resources none → 小组全体成员 |
| 56 | 教师代表的访谈2 | 2018-12-23 09:00 → 2018-12-02 10:00 (-21d) | 2018-12-23 10:00 → 2018-12-02 11:00 (-21d) |  |  |  | none → 47, 49, 54 | was named 教师代表的访谈 |
| 58 | 管理员代表的访谈1 |  |  |  |  |  |  | was named 管理员代表的访谈 |
| 59 | 教师代表的访谈3 | 2019-01-04 09:00 → 2018-12-16 09:00 (-19d) | 2019-01-04 10:00 → 2018-12-16 10:00 (-19d) |  |  |  | none → 51, 52 | was named 教师代表的访谈 |
| 60 | 教师代表访谈4 | 2019-01-04 09:00 → 2018-12-23 09:00 (-12d) | 2019-01-04 09:12 → 2018-12-23 10:00 (-12d) | 0.2h → 1h |  |  | none → 59, 64 | was named 1.4教师代表第二次访谈 |
| 63 | 管理员代表的访谈2 | 2018-12-28 09:00 → 2018-12-21 14:30 (-7d) | 2018-12-28 09:30 → 2018-12-21 15:00 (-7d) |  |  |  | none → 65 | was named 管理员代表的访谈 |
| 64 | 更新界面原型 |  |  |  |  |  | none → 59 |  |
| 65 | 制作管理员界面原型 | 2018-12-24 09:00 → 2018-12-23 09:00 (-1d) | 2018-12-25 09:00 → 2018-12-23 13:00 (-2d) | 1d? → 4h |  |  | none → 58 | resources none → 陈子卿 |
| 66 | 界面原型的修改 | 2018-12-29 09:00 → 2018-12-10 10:00 (-19d) | 2018-12-29 21:00 → 2018-12-11 15:00 (-18d) |  |  |  | none → 60 |  |
| 70 | 修改web界面原型 | 2019-01-04 09:00 → 2018-12-10 10:00 (-25d) | 2019-01-05 09:00 → 2018-12-10 11:00 (-26d) | 8h → 1h |  |  | none → 60 | resources 黄为波 → 陈子卿 |
| 74 | 修改app界面原型 |  |  |  |  |  | none → 73 |  |
| 77 | jad会议 |  |  |  |  |  | none → 76 |  |
| 78 | **需求分析** | 2018-12-09 09:00 → 2018-12-11 09:00 (+2d) | 2019-01-08 11:00 → 2019-01-12 18:00 (+4d) | 35.88d → 38.12d? |  | 0d → none |  |  |
| 79 | 分析获取需求的可行性 | 2018-12-10 09:00 → 2018-12-12 09:00 (+2d) | 2018-12-10 10:00 → 2018-12-12 10:00 (+2d) |  |  |  |  |  |
| 80 | 编写数据字典 | 2018-12-09 09:00 → 2018-12-22 09:00 (+13d) | 2018-12-14 18:00 → 2018-12-22 15:00 (+8d) | 53h → 6h |  |  | 创建开发原型, 79, 确定需求的优先级, 需求建模 → 79 | resources 小组全体成员 → 黄为波 |
| 81 | 编写e-r图，数据库设计 |  |  |  |  |  | none → 59, 51, 52 |  |
| 82 | 编写数据字典 |  |  |  |  |  | none → 59, 51, 52 |  |
| 83 | 编写游客用例图 |  | 2018-12-23 17:00 → 2018-12-23 11:00 | 1d → 2h |  |  | none → 59, 51, 52 |  |
| 84 | 编写游客对话框图 |  |  |  |  |  | none → 59, 51, 52 |  |
| 85 | 编写游客测试用例 |  |  |  |  |  | none → 59, 51, 52 |  |
| 86 | 编写教师，学生用例图 |  |  |  |  |  | none → 59, 51, 52 |  |
| 87 | 编写教师，学生顺序图 |  |  |  |  |  | none → 59, 51, 52 |  |
| 88 | 编写教师，学生对话框图 |  |  |  |  |  | none → 59, 51, 52 |  |
| 89 | 编写管理员顺序图 |  |  |  |  |  | none → 59, 51, 52 |  |
| 90 | 编写管理员对话框图 |  |  |  |  |  | none → 59, 51, 52 |  |
| 93 | 制作用户手册 |  |  |  |  |  | none → 59, 51, 52 |  |
| 96 | 编写并发送需求优先级打分表(除管理员部分) | 2019-01-08 09:00 → 2019-01-07 09:00 (-1d) | 2019-01-08 11:00 → 2019-01-07 12:00 (-1d) | 2h → 3h |  |  | none → 77 | was named 编写项目优先级打分表 |
| 97 | 统计项目优先级打分表结果 | 2019-01-08 09:00 → 2019-01-09 09:00 (+1d) | 2019-01-08 11:00 → 2019-01-09 11:00 (+1d) |  |  |  | none → 96 | was named 编写项目优先级打分表 |
| 98 | 统计管理员需求优先级打分表 | 2018-12-09 09:00 → 2019-01-09 09:00 (+31d) | 2018-12-09 17:00 → 2019-01-09 10:00 (+31d) | 1d? → 1h |  |  | none → 75, 77 | was named <新任务>; resources none → 蔡峰 |
| 103 | **需求规范规格** |  | 2018-12-12 18:00 → 2019-01-08 18:00 (+27d) | 25.75d → 57.75d |  |  |  |  |
| 104 | 确定每个需求的唯一标识 | 2018-12-09 09:00 → 2018-12-22 10:00 (+13d) | 2018-12-09 10:00 → 2018-12-22 11:00 (+13d) |  |  |  | 79, 确定需求的优先级, 需求建模 → 73, 74, 75 | resources 黄为波 → 江亮儒 |
| 106 | 编写需求规格说明书 |  |  |  |  |  | 使用需求规格说明书的模版, 确认需求来源, 104, 105 → 104, 105 |  |
| 107 | 根据最新界面更新用例图描述 |  |  |  |  |  | none → 73, 74, 75 |  |
| 108 | 需求SRS评审 | 2018-12-12 09:00 → 2019-01-12 09:00 (+31d) | 2018-12-12 09:00 → 2019-01-12 09:00 (+31d) |  |  |  | 106 → 106, 94, 95, 97, 98 |  |
| 109 | **需求规格审核** | 2018-12-12 09:00 → 2019-01-01 09:00 (+20d) | 2018-12-19 18:00 → 2019-01-15 18:00 (+27d) | 9.25d → 17.5d |  |  |  |  |
| 110 | 编写web用户手册 | 2018-12-14 09:00 → 2019-01-13 10:30 (+30d) | 2018-12-14 10:00 → 2019-01-13 18:30 (+30d) | 1h → 8h |  |  | 108 → 134 | was named 编写用户手册 |
| 117 | **需求管理阶段** |  |  | 11.25d → 11.25d? |  |  |  |  |
| 125 | 建立基线并控制需求集合版本 | 2019-01-07 09:00 → 2019-01-10 09:30 (+3d) | 2019-01-07 10:00 → 2019-01-10 11:30 (+3d) | 1h → 2h |  |  | 对需求变更影响分析 → 122 | resources 江亮儒 → 苏雨豪 |
| 126 | 重新编写测试用例 | 2019-01-10 09:00 → 2019-01-10 14:30 | 2019-01-10 10:00 → 2019-01-11 14:30 (+1d) | 1h → 8h |  |  | none → 125, 128, 129, 124 | resources 江亮儒 → 黄为波 |
| 127 | 建立CCB变更控制委员会 | 2019-01-06 09:00 → 2019-01-09 09:00 (+3d) | 2019-01-06 17:00 → 2019-01-09 10:00 (+3d) | 1d → 1h |  |  |  | resources 小组全体成员 → 黄为波 |
| 128 | 向CCB委员会主席确认变更需求申请 | 2019-01-09 09:00 → 2019-01-10 13:30 (+1d) | 2019-01-09 10:00 → 2019-01-10 14:30 (+1d) |  |  |  | none → 127, 129, 124, 125 | resources 小组全体成员 → 黄为波 |
| 129 | 向CCB委员会开发者代表确定技术可行性 |  |  |  |  |  |  | resources 小组全体成员 → 江亮儒 |
| 130 | 变更部分界面原型 | 2019-01-09 09:00 → 2019-01-10 14:30 (+1d) | 2019-01-09 10:00 → 2019-01-10 15:30 (+1d) |  |  |  | 110 → 128 | was named 完善界面原型; resources 陈子卿; 黄为波 → 黄为波 |
| 131 | 变更部分用户手册 | 2019-01-09 09:00 → 2019-01-10 15:30 (+1d) | 2019-01-09 10:00 → 2019-01-10 16:30 (+1d) |  |  |  |  | was named 完善用户手册; resources 蔡峰; 江亮儒 → 江亮儒; 陈子卿 |
| 134 | 验证变更评审 | 2019-01-11 09:00 → 2019-01-11 13:00 | 2019-01-11 09:00 → 2019-01-11 13:00 |  |  |  | 126, 130, 131 → 133 | resources 苏雨豪 → 小组全体成员 |
| 139 | **项目收尾** |  |  | 19.25d → 19.25d? |  |  |  |  |
| 142 | 制作最终评审PPT | 2019-01-05 09:00 → 2019-01-14 10:30 (+9d) | 2019-01-05 13:00 → 2019-01-14 15:30 (+9d) |  |  |  | 134 → 134, 110, 111, 112, 113, 114, 115, 116 | resources 小组全体成员 → 江亮儒; 苏雨豪 |
| 143 | 小组成员个人总结 | 2019-01-06 09:00 → 2019-01-13 09:00 (+7d) | 2019-01-06 10:00 → 2019-01-13 10:00 (+7d) |  |  |  |  |  |
| 144 | 小组总体工作总结 | 2019-01-12 09:00 → 2019-01-13 09:00 (+1d) | 2019-01-12 11:00 → 2019-01-13 11:00 (+1d) |  |  |  |  |  |
| 145 | 最终评审PPT答辩 | 2019-01-20 09:00 → 2019-01-15 11:00 (-5d) | 2019-01-20 09:00 → 2019-01-15 11:00 (-5d) |  |  |  | 142, 143, 144 → 142, 143, 144, 108, 134, 138 |  |
| 146 | **培训与翻转课堂** |  | 2018-11-06 09:00 → 2018-12-28 12:00 (+52d) | 38.25d → 99.38d |  |  |  |  |
| 170 | **会议** |  | 2018-12-09 10:00 → 2019-01-10 10:00 (+32d) | 85.25d → 122.88d |  |  |  |  |

## Version 4 (saved 2019-01-16, file PRD2018-G11-需求工程计划甘特图（实际）.mpp)

Note of the change: 提交PPT修改

Last finish stays 2019-01-20. Complete tasks 37 → 170.

Changed:

| ID | Task | Start | Finish | Complete |
| --- | --- | --- | --- | --- |
| 1 | **需求工程项目准备** |  |  | 95% → 97% |
| 6 | **需求工程项目计划** | 2018-09-26 09:00 A → 2018-09-26 09:00 |  | 91% → 95% |
| 36 | 更新干系人手册 | 2018-10-31 09:00 A | 2018-10-31 09:30 A | 0% → 100% |
| 37 | 根据最新标准修改了项目计划中的时薪 | 2018-10-31 09:30 A | 2018-10-31 10:00 A | 0% → 100% |
| 38 | 修改了wbs结构 | 2018-12-14 09:00 A | 2018-12-14 09:30 A | 0% → 100% |
| 39 | 重新编写了wbs-io表 | 2018-12-16 09:00 A | 2018-12-16 10:00 A | 0% → 100% |
| 40 | **需求开发阶段** |  |  | 6% → 100% |
| 41 | **需求获取** |  |  | 14% → 100% |
| 43 | 团队建设 | 2018-11-20 09:00 A | 2018-11-20 11:00 A | 0% → 100% |
| 51 | 制作web界面原型初步 | 2018-12-16 09:00 A | 2018-12-17 10:00 A | 0% → 100% |
| 52 | 修改了愿景与范围文档确定的干系人 | 2018-12-14 09:00 A | 2018-12-14 10:36 A | 0% → 100% |
| 53 | 教师代表的访谈1 | 2018-11-28 09:00 A | 2018-11-28 10:00 A | 0% → 100% |
| 54 | 游客代表的访谈 | 2018-11-15 09:00 A | 2018-11-15 09:30 A | 0% → 100% |
| 55 | 教师代表的访谈2 | 2018-12-02 10:00 A | 2018-12-02 11:00 A | 0% → 100% |
| 56 | 学生代表的访谈 | 2018-11-15 09:00 A | 2018-11-15 09:30 A | 0% → 100% |
| 57 | 管理员代表的访谈1 | 2018-12-21 09:00 A | 2018-12-21 09:30 A | 0% → 100% |
| 58 | 教师代表的访谈3 | 2018-12-16 09:00 A | 2018-12-16 10:00 A | 0% → 100% |
| 59 | 教师代表访谈4 | 2018-12-23 09:00 A | 2018-12-23 10:00 A | 0% → 100% |
| 60 | 教师代表访谈5 | 2019-01-04 09:00 A | 2019-01-04 10:00 A | 0% → 100% |
| 61 | 教师代表访谈6 | 2019-01-04 09:00 A | 2019-01-04 10:00 A | 0% → 100% |
| 62 | 管理员代表的访谈2 | 2018-12-21 14:30 A | 2018-12-21 15:00 A | 0% → 100% |
| 63 | 更新界面原型 | 2018-12-23 09:00 A | 2018-12-23 13:00 A | 0% → 100% |
| 64 | 制作管理员界面原型 | 2018-12-23 09:00 A | 2018-12-23 13:00 A | 0% → 100% |
| 65 | 界面原型的修改 | 2018-12-10 10:00 A | 2018-12-11 15:00 A | 0% → 100% |
| 66 | 修改管理员界面原型 | 2018-12-31 09:00 A | 2018-12-31 11:00 A | 0% → 100% |
| 67 | 制作手机界面原型 | 2019-01-01 09:00 A | 2019-01-02 09:00 A | 0% → 100% |
| 68 | 添加新版测试用例 | 2019-01-01 09:00 A | 2019-01-01 14:00 A | 0% → 100% |
| 69 | 修改web界面原型 | 2018-12-10 10:00 A | 2018-12-10 11:00 A | 0% → 100% |
| 70 | 管理员代表访谈3 | 2019-01-02 09:00 A | 2019-01-02 09:30 A | 0% → 100% |
| 71 | 修改愿景与范围文档 | 2019-01-03 09:00 A | 2019-01-03 09:30 A | 0% → 100% |
| 72 | 修改web界面原型 | 2019-01-04 10:00 A | 2019-01-05 12:00 A | 0% → 100% |
| 73 | 修改app界面原型 | 2019-01-06 09:00 A | 2019-01-06 15:00 A | 0% → 100% |
| 74 | 修改管理员界面原型 | 2019-01-06 09:00 A | 2019-01-06 10:30 A | 0% → 100% |
| 75 | 制作jad会议PPT | 2019-01-06 09:00 A | 2019-01-06 10:00 A | 0% → 100% |
| 76 | jad会议 | 2019-01-06 09:00 A | 2019-01-06 10:00 A | 0% → 100% |
| 77 | **需求分析** |  |  | 0% → 100% |
| 78 | 分析获取需求的可行性 | 2018-12-12 09:00 A | 2018-12-12 10:00 A | 0% → 100% |
| 79 | 编写数据字典 | 2018-12-22 09:00 A | 2018-12-22 15:00 A | 0% → 100% |
| 80 | 编写e-r图，数据库设计 | 2018-12-23 09:00 A | 2018-12-23 11:00 A | 0% → 100% |
| 81 | 编写数据字典 | 2018-12-23 09:00 A | 2018-12-23 11:00 A | 0% → 100% |
| 82 | 编写游客用例图 | 2018-12-23 09:00 A | 2018-12-23 11:00 A | 0% → 100% |
| 83 | 编写游客对话框图 | 2018-12-23 09:00 A | 2018-12-23 11:00 A | 0% → 100% |
| 84 | 编写游客测试用例 | 2018-12-23 09:00 A | 2018-12-23 11:00 A | 0% → 100% |
| 85 | 编写教师，学生用例图 | 2018-12-23 09:00 A | 2018-12-23 13:00 A | 0% → 100% |
| 86 | 编写教师，学生顺序图 | 2018-12-24 09:00 A | 2018-12-24 14:00 A | 0% → 100% |
| 87 | 编写教师，学生对话框图 | 2018-12-24 09:00 A | 2018-12-24 14:00 A | 0% → 100% |
| 88 | 编写管理员顺序图 | 2018-12-24 09:00 A | 2018-12-24 14:00 A | 0% → 100% |
| 89 | 编写管理员对话框图 | 2018-12-24 09:00 A | 2018-12-24 14:00 A | 0% → 100% |
| 90 | 编写管理员用例描述 | 2018-12-24 09:00 A | 2018-12-24 14:00 A | 0% → 100% |
| 91 | 编写管理员测试用例 | 2018-12-24 09:00 A | 2018-12-24 14:00 A | 0% → 100% |
| 92 | 制作用户手册 | 2018-12-23 09:00 A | 2018-12-23 11:00 A | 0% → 100% |
| 93 | 重写教师学生游客用例说明 | 2019-01-06 09:00 A | 2019-01-06 17:00 A | 0% → 100% |
| 94 | 重写教师学生游客对话框图，顺序图 | 2019-01-07 09:00 A | 2019-01-08 09:00 A | 0% → 100% |
| 95 | 编写并发送需求优先级打分表(除管理员部分) | 2019-01-07 09:00 A | 2019-01-07 12:00 A | 0% → 100% |
| 96 | 统计项目优先级打分表结果 | 2019-01-09 09:00 A | 2019-01-09 11:00 A | 0% → 100% |
| 97 | 统计管理员需求优先级打分表 | 2019-01-09 09:00 A | 2019-01-09 10:00 A | 0% → 100% |
| 98 | 添加更加精确的用例描述 | 2019-01-10 09:00 A | 2019-01-10 11:00 A | 0% → 100% |
| 99 | 修改了web端界面原型 | 2018-12-13 09:00 A | 2018-12-13 11:00 A | 0% → 100% |
| 100 | 编写并上传管理员用例相关文档 | 2019-01-11 09:00 A | 2019-01-12 09:00 A | 0% → 100% |
| 101 | 编写管理员顺序图 | 2019-01-11 09:00 A | 2019-01-11 14:00 A | 0% → 100% |
| 102 | **需求规范规格** |  |  | 0% → 100% |
| 103 | 确定每个需求的唯一标识 | 2018-12-22 10:00 A | 2018-12-22 11:00 A | 0% → 100% |
| 104 | 记录非功能需求 | 2018-12-10 09:00 A | 2018-12-10 10:00 A | 0% → 100% |
| 105 | 编写需求规格说明书 | 2018-12-11 09:00 A | 2018-12-11 10:00 A | 0% → 100% |
| 106 | 根据最新界面更新用例图描述 | 2019-01-08 09:00 A | 2019-01-08 15:00 A | 0% → 100% |
| 107 | 需求SRS评审 | 2019-01-12 09:00 A | 2019-01-12 09:00 A | 0% → 100% |
| 108 | **需求规格审核** |  |  | 0% → 100% |
| 109 | 编写web用户手册 | 2019-01-13 10:30 A | 2019-01-13 18:30 A | 0% → 100% |
| 110 | 编写app用户手册 | 2019-01-13 10:30 A | 2019-01-13 16:30 A | 0% → 100% |
| 111 | 修改界面原型存在的BUG | 2019-01-13 16:30 A | 2019-01-13 17:30 A | 0% → 100% |

| ID | Task | Start | Finish | Complete | Total float |
| --- | --- | --- | --- | --- | --- |
| 112 | 更新用户手册 | 2019-01-13 17:30 A | 2019-01-13 18:30 A | 0% → 100% |  |
| 113 | 重新编写数据字典以及数据库设计 | 2019-01-13 18:30 A | 2019-01-14 10:30 A | 0% → 100% |  |
| 114 | 增加APP测试用例 | 2019-01-14 09:00 A | 2019-01-14 11:00 A | 0% → 100% |  |
| 115 | 增加管理员部分测试用例 | 2019-01-14 09:00 A | 2019-01-14 14:00 A | 0% → 100% |  |
| 116 | **需求管理阶段** |  | 2019-01-15 12:00 A | 0% → 100% |  |
| 117 | 编写变更管理文档 | 2019-01-08 09:00 A | 2019-01-08 10:00 A | 0% → 100% |  |
| 118 | 编写变更申请书 | 2019-01-08 09:00 A | 2019-01-08 09:30 A | 0% → 100% |  |
| 119 | 修改变更管理文档 | 2019-01-09 09:00 A | 2019-01-09 09:30 A | 0% → 100% |  |
| 120 | 将需求导入DOORS需求管理工具 | 2019-01-09 09:30 A | 2019-01-09 11:30 A | 0% → 100% |  |
| 121 | 建立各个需求之间的关联 | 2019-01-09 11:30 A | 2019-01-10 09:30 A | 0% → 100% |  |
| 122 | 分析变更的需求的影响 | 2019-01-10 09:30 A | 2019-01-10 11:30 A | 0% → 100% |  |
| 123 | 修改变更申请书 | 2019-01-09 09:00 A | 2019-01-09 10:00 A | 0% → 100% |  |
| 124 | 建立基线并控制需求集合版本 | 2019-01-10 09:30 A | 2019-01-10 11:30 A | 0% → 100% |  |
| 125 | 重新编写测试用例 | 2019-01-10 14:30 A | 2019-01-11 14:30 A | 0% → 100% |  |
| 126 | 建立CCB变更控制委员会 | 2019-01-09 09:00 A | 2019-01-09 10:00 A | 0% → 100% |  |
| 127 | 向CCB委员会主席确认变更需求申请 | 2019-01-10 13:30 A | 2019-01-10 14:30 A | 0% → 100% |  |
| 128 | 向CCB委员会开发者代表确定技术可行性 | 2019-01-09 09:00 A | 2019-01-09 10:00 A | 0% → 100% |  |
| 129 | 变更部分界面原型 | 2019-01-10 14:30 A | 2019-01-10 15:30 A | 0% → 100% |  |
| 130 | 变更部分用户手册 | 2019-01-10 15:30 A | 2019-01-10 16:30 A | 0% → 100% |  |
| 131 | 制作验证变更评审PPT | 2019-01-10 16:30 A | 2019-01-11 11:30 A | 0% → 100% |  |
| 132 | 验证变更内部评审 | 2019-01-11 11:30 A | 2019-01-11 12:00 A | 0% → 100% |  |
| 133 | 验证变更评审 | 2019-01-11 13:00 A | 2019-01-11 13:00 A | 0% → 100% |  |
| 134 | 将文档导入需求管理工具 | 2019-01-14 09:00 A | 2019-01-14 12:00 A | 0% → 100% |  |
| 135 | 建立变更需求与文档中各个模块的链接关系 | 2019-01-14 09:00 A | 2019-01-14 16:00 A | 0% → 100% |  |
| 136 | 分析新的需求影响 | 2019-01-15 09:00 A | 2019-01-15 12:00 A | 0% → 100% |  |
| 137 | 分析变更的需求的影响 | 2019-01-15 09:00 A | 2019-01-15 11:00 A | 0% → 100% |  |
| 138 | **项目收尾** |  |  | 0% → 100% |  |
| 139 | 完成管理员相关用例文档的修改 | 2019-01-14 09:00 A | 2019-01-14 16:00 A | 0% → 100% |  |
| 140 | 完成管理员相关测试的修改 | 2019-01-14 09:00 A | 2019-01-14 12:00 A | 0% → 100% |  |
| 141 | 制作最终评审PPT | 2019-01-14 10:30 A | 2019-01-14 15:30 A | 0% → 100% |  |
| 142 | 小组成员个人总结 | 2019-01-13 09:00 A | 2019-01-13 10:00 A | 0% → 100% |  |
| 143 | 小组总体工作总结 | 2019-01-13 09:00 A | 2019-01-13 11:00 A | 0% → 100% |  |
| 144 | 最终评审PPT答辩 | 2019-01-15 11:00 A | 2019-01-15 11:00 A | 0% → 100% |  |
| 145 | **培训与翻转课堂** | 2018-09-28 09:00 A | 2018-12-28 12:00 A | 0% → 100% | 0d → none |
| 146 | 负责讲解project的使用 | 2018-09-28 09:00 A | 2018-09-28 11:00 A | 0% → 100% |  |
| 147 | 负责讲解word文档规范排版 | 2018-09-29 09:00 A | 2018-09-29 10:00 A | 0% → 100% |  |
| 148 | uml概述的学习以及PPT制作 | 2018-10-13 09:00 A | 2018-10-13 10:00 A | 0% → 100% |  |
| 149 | 1.7UML2.0新特性+目录 | 2018-10-14 09:00 A | 2018-10-14 11:00 A | 0% → 100% |  |
| 150 | 完成1.1-1.4UML的结构制作 | 2018-10-14 09:00 A | 2018-10-14 11:00 A | 0% → 100% |  |
| 151 | UML图PPT的初步编写 | 2018-10-14 09:00 A | 2018-10-14 11:00 A | 0% → 100% |  |
| 152 | 完成UML视图及系统开发阶段部分 | 2018-10-14 09:00 A | 2018-10-14 11:00 A | 0% → 100% |  |
| 153 | uml概述PPT答辩 | 2018-10-17 09:00 A | 2018-10-17 09:00 A | 0% → 100% |  |
| 154 | uml概述PPT修改 | 2018-10-19 09:00 A | 2018-10-19 09:30 A | 0% → 100% |  |
| 155 | uml工具的学习 | 2018-10-21 09:00 A | 2018-10-21 10:00 A | 0% → 100% |  |
| 156 | uml工具翻转PPT制作 | 2018-10-21 09:00 A | 2018-10-21 10:00 A | 0% → 100% |  |
| 157 | uml工具翻转PPT答辩 | 2018-10-24 09:00 A | 2018-10-24 09:00 A | 0% → 100% |  |
| 158 | uml建模基础学习 | 2018-10-25 09:00 A | 2018-10-25 10:00 A | 0% → 100% |  |
| 159 | 用例图、类图PPT制作 | 2018-10-25 10:00 A | 2018-10-25 12:00 A | 0% → 100% | 103.38d → none |
| 160 | 通信图PPT制作 | 2018-10-27 09:00 A | 2018-10-27 10:00 A | 0% → 100% |  |
| 161 | 部署图PPT制作 | 2018-10-28 09:00 A | 2018-10-28 10:00 A | 0% → 100% |  |
| 162 | 状态机图PPT制作 | 2018-10-28 09:00 A | 2018-10-28 10:00 A | 0% → 100% |  |
| 163 | 顺序图PPT制作 | 2018-10-27 09:00 A | 2018-10-27 10:00 A | 0% → 100% |  |
| 164 | uml图PPT答辩 | 2018-10-31 09:00 A | 2018-10-31 09:00 A | 0% → 100% |  |
| 165 | uml界面原型学习 | 2018-11-04 09:00 A | 2018-11-04 10:00 A | 0% → 100% |  |
| 166 | uml界面原型翻转 | 2018-11-06 09:00 A | 2018-11-06 09:00 A | 0% → 100% |  |
| 167 | 制作学习PPTUML基础3 | 2018-12-09 09:00 A | 2018-12-09 13:00 A | 0% → 100% |  |
| 168 | 制作学习PPTUML基础4 | 2018-12-28 09:00 A | 2018-12-28 12:00 A | 0% → 100% |  |
| 169 | **会议** | 2018-09-21 09:00 A | 2019-01-10 10:00 A | 0% → 100% | 0d → none |
| 170 | 第1次会议（明确贯穿项目的职责） | 2018-09-21 09:00 A | 2018-09-21 10:00 A | 0% → 100% |  |
| 171 | 第2次会议(任务的安排与约定) | 2018-09-28 09:00 A | 2018-09-28 10:00 A | 0% → 100% |  |
| 172 | 第3次会议(任务的安排与约定) | 2018-10-12 09:00 A | 2018-10-12 10:00 A | 0% → 100% |  |
| 173 | 第4次会议(任务的安排与约定) | 2018-10-19 09:00 A | 2018-10-19 10:00 A | 0% → 100% |  |
| 174 | 第5次会议(阶段性检查与审核) | 2018-10-20 09:00 A | 2018-10-20 10:00 A | 0% → 100% |  |
| 175 | 第6次会议(阶段性检查与审核) | 2018-10-28 09:00 A | 2018-10-28 10:00 A | 0% → 100% |  |
| 176 | 第7次会议(阶段性检查与审核) | 2018-11-04 09:00 A | 2018-11-04 10:00 A | 0% → 100% |  |
| 177 | 第8次会议(周任务安排) | 2018-11-13 09:00 A | 2018-11-13 09:30 A | 0% → 100% |  |
| 178 | 第9次会议 | 2018-11-23 09:00 A | 2018-11-23 10:00 A | 0% → 100% |  |
| 179 | 第10次会议 | 2018-12-09 09:00 A | 2018-12-09 10:00 A | 0% → 100% |  |
| 180 | 第11次会议 | 2018-12-16 09:00 A | 2018-12-16 10:00 A | 0% → 100% |  |
| 181 | 第12次会议 | 2018-12-21 09:00 A | 2018-12-21 10:00 A | 0% → 100% |  |

| ID | Task | Start | Finish | Complete |
| --- | --- | --- | --- | --- |
| 182 | 第13次会议 | 2018-12-26 09:00 A | 2018-12-26 10:00 A | 0% → 100% |
| 183 | 第14次会议 | 2018-12-28 09:00 A | 2018-12-28 10:00 A | 0% → 100% |
| 184 | 第15次会议 | 2019-01-04 09:00 A | 2019-01-04 10:00 A | 0% → 100% |
| 185 | 第16次会议 | 2019-01-10 09:00 A | 2019-01-10 10:00 A | 0% → 100% |
